ID,Bridge,Activity,Duration,Calendar,Predecessors,Resource,Owner,Start,Finish exclusive,Total float calendar days,Status,Basis
START,COMMON,Assumed commencement — scenario only,0,ALL,,,Contracts,2026-11-01,2026-11-01,1,PROPOSED / NOT APPROVED,1Nov2026 assumed; actual NOA unconfirmed
G01,COMMON,Contract/amendment matrix and scope reconciliation,5,OFFICE,START,,Contracts,2026-11-02,2026-11-07,0,PROPOSED / NOT APPROVED,Proposed allowance; replace with verified inputs
G02,COMMON,"Survey permits, access and mobilisation preparation",10,OFFICE,G01,,Survey / Operations,2026-11-09,2026-11-21,0,PROPOSED / NOT APPROVED,Proposed allowance; replace with verified inputs
G03,COMMON,Pre-engineering survey campaign,15,OFF,G02;D-SURV,Survey spread,Survey,2026-11-21,2026-12-06,1,PROPOSED / NOT APPROVED,Proposed allowance; replace with verified inputs
G04,COMMON,"Survey reports, geometry/condition reconciliation",5,OFFICE,G03,,Engineering,2026-12-07,2026-12-12,0,PROPOSED / NOT APPROVED,Proposed allowance; replace with verified inputs
G05,COMMON,Survey/basis review and comment closure allowance,10,OFFICE,G04,,Engineering,2026-12-14,2026-12-26,0,PROPOSED / NOT APPROVED,Proposed allowance; replace with verified inputs
P-BEAR,COMMON,"Bearings, sliding interfaces and guides — requisition/technical scope",5,OFFICE,G05,,Engineering,2026-12-28,2027-01-02,312,PROPOSED / NOT APPROVED,Proposed allowance; replace with verified inputs
R-BEAR,COMMON,"Bearings, sliding interfaces and guides — bid/PS review allowance",10,OFFICE,P-BEAR,,Engineering,2027-01-04,2027-01-16,312,PROPOSED / NOT APPROVED,Proposed allowance; replace with verified inputs
D-BEAR,COMMON,"Bearings, sliding interfaces and guides — delivery/readiness",35,ALL,R-BEAR,,Engineering,2027-01-16,2027-02-20,314,PROPOSED / NOT APPROVED,Unverified vendor/service lead-time allowance; no quote or commitment
P-GRAT,COMMON,"Grating, handrail and GI sheet supply — requisition/technical scope",5,OFFICE,G05,,Procurement,2026-12-28,2027-01-02,312,PROPOSED / NOT APPROVED,Proposed allowance; replace with verified inputs
R-GRAT,COMMON,"Grating, handrail and GI sheet supply — bid/PS review allowance",10,OFFICE,P-GRAT,,Procurement,2027-01-04,2027-01-16,312,PROPOSED / NOT APPROVED,Proposed allowance; replace with verified inputs
D-GRAT,COMMON,"Grating, handrail and GI sheet supply — delivery/readiness",35,ALL,R-GRAT,,Procurement,2027-01-16,2027-02-20,314,PROPOSED / NOT APPROVED,Unverified vendor/service lead-time allowance; no quote or commitment
P-PIPE,COMMON,"Piping tie-ins, fittings and supports — requisition/technical scope",5,OFFICE,G05,,Piping,2026-12-28,2027-01-02,316,PROPOSED / NOT APPROVED,Proposed allowance; replace with verified inputs
R-PIPE,COMMON,"Piping tie-ins, fittings and supports — bid/PS review allowance",10,OFFICE,P-PIPE,,Piping,2027-01-04,2027-01-16,316,PROPOSED / NOT APPROVED,Proposed allowance; replace with verified inputs
D-PIPE,COMMON,"Piping tie-ins, fittings and supports — delivery/readiness",45,ALL,R-PIPE,,Piping,2027-01-16,2027-03-02,318,PROPOSED / NOT APPROVED,Unverified vendor/service lead-time allowance; no quote or commitment
P-ELEC,COMMON,Electrical materials and bonding — requisition/technical scope,5,OFFICE,G05,,Electrical,2026-12-28,2027-01-02,322,PROPOSED / NOT APPROVED,Proposed allowance; replace with verified inputs
R-ELEC,COMMON,Electrical materials and bonding — bid/PS review allowance,10,OFFICE,P-ELEC,,Electrical,2027-01-04,2027-01-16,322,PROPOSED / NOT APPROVED,Proposed allowance; replace with verified inputs
D-ELEC,COMMON,Electrical materials and bonding — delivery/readiness,40,ALL,R-ELEC,,Electrical,2027-01-16,2027-02-25,323,PROPOSED / NOT APPROVED,Unverified vendor/service lead-time allowance; no quote or commitment
P-INST,COMMON,Instrumentation/cable interface materials — requisition/technical scope,5,OFFICE,G05,,Instrumentation,2026-12-28,2027-01-02,322,PROPOSED / NOT APPROVED,Proposed allowance; replace with verified inputs
R-INST,COMMON,Instrumentation/cable interface materials — bid/PS review allowance,10,OFFICE,P-INST,,Instrumentation,2027-01-04,2027-01-16,322,PROPOSED / NOT APPROVED,Proposed allowance; replace with verified inputs
D-INST,COMMON,Instrumentation/cable interface materials — delivery/readiness,40,ALL,R-INST,,Instrumentation,2027-01-16,2027-02-25,323,PROPOSED / NOT APPROVED,Unverified vendor/service lead-time allowance; no quote or commitment
P-COAT,COMMON,Qualified coating system supply — requisition/technical scope,5,OFFICE,G05,,Coating,2026-12-28,2027-01-02,224,PROPOSED / NOT APPROVED,Proposed allowance; replace with verified inputs
R-COAT,COMMON,Qualified coating system supply — bid/PS review allowance,10,OFFICE,P-COAT,,Coating,2027-01-04,2027-01-16,224,PROPOSED / NOT APPROVED,Proposed allowance; replace with verified inputs
D-COAT,COMMON,Qualified coating system supply — delivery/readiness,25,ALL,R-COAT,,Coating,2027-01-16,2027-02-10,225,PROPOSED / NOT APPROVED,Unverified vendor/service lead-time allowance; no quote or commitment
P-NDT,COMMON,"NDT, welding qualification and consumables — requisition/technical scope",5,OFFICE,G05,,QA,2026-12-28,2027-01-02,100,PROPOSED / NOT APPROVED,Proposed allowance; replace with verified inputs
R-NDT,COMMON,"NDT, welding qualification and consumables — bid/PS review allowance",10,OFFICE,P-NDT,,QA,2027-01-04,2027-01-16,100,PROPOSED / NOT APPROVED,Proposed allowance; replace with verified inputs
D-NDT,COMMON,"NDT, welding qualification and consumables — delivery/readiness",20,ALL,R-NDT,,QA,2027-01-16,2027-02-05,102,PROPOSED / NOT APPROVED,Unverified vendor/service lead-time allowance; no quote or commitment
P-MAR,COMMON,Heavy-lift and accommodation spread readiness — requisition/technical scope,5,OFFICE,G05,,Marine,2026-12-28,2027-01-02,302,PROPOSED / NOT APPROVED,Proposed allowance; replace with verified inputs
R-MAR,COMMON,Heavy-lift and accommodation spread readiness — bid/PS review allowance,10,OFFICE,P-MAR,,Marine,2027-01-04,2027-01-16,302,PROPOSED / NOT APPROVED,Proposed allowance; replace with verified inputs
D-MAR,COMMON,Heavy-lift and accommodation spread readiness — delivery/readiness,45,ALL,R-MAR,,Marine,2027-01-16,2027-03-02,304,PROPOSED / NOT APPROVED,Unverified vendor/service lead-time allowance; no quote or commitment
P-CARGO,COMMON,Cargo vessel and shore-base readiness — requisition/technical scope,5,OFFICE,G05,,Logistics,2026-12-28,2027-01-02,287,PROPOSED / NOT APPROVED,Proposed allowance; replace with verified inputs
R-CARGO,COMMON,Cargo vessel and shore-base readiness — bid/PS review allowance,10,OFFICE,P-CARGO,,Logistics,2027-01-04,2027-01-16,287,PROPOSED / NOT APPROVED,Proposed allowance; replace with verified inputs
D-CARGO,COMMON,Cargo vessel and shore-base readiness — delivery/readiness,25,ALL,R-CARGO,,Logistics,2027-01-16,2027-02-10,288,PROPOSED / NOT APPROVED,Unverified vendor/service lead-time allowance; no quote or commitment
P-SURV,COMMON,Survey services mobilisation — requisition/technical scope,2,OFFICE,G01,,Survey,2026-11-09,2026-11-11,1,PROPOSED / NOT APPROVED,Proposed allowance; replace with verified inputs
R-SURV,COMMON,Survey services mobilisation — bid/PS review allowance,3,OFFICE,P-SURV,,Survey,2026-11-11,2026-11-14,1,PROPOSED / NOT APPROVED,Proposed allowance; replace with verified inputs
D-SURV,COMMON,Survey services mobilisation — delivery/readiness,5,ALL,R-SURV,,Survey,2026-11-14,2026-11-19,3,PROPOSED / NOT APPROVED,Unverified vendor/service lead-time allowance; no quote or commitment
P-DES,COMMON,Design agency capacity confirmation — requisition/technical scope,5,OFFICE,G01,,Engineering,2026-11-09,2026-11-14,18,PROPOSED / NOT APPROVED,Proposed allowance; replace with verified inputs
R-DES,COMMON,Design agency capacity confirmation — bid/PS review allowance,10,OFFICE,P-DES,,Engineering,2026-11-16,2026-11-28,18,PROPOSED / NOT APPROVED,Proposed allowance; replace with verified inputs
D-DES,COMMON,Design agency capacity confirmation — delivery/readiness,10,ALL,R-DES,,Engineering,2026-11-28,2026-12-08,20,PROPOSED / NOT APPROVED,Unverified vendor/service lead-time allowance; no quote or commitment
P-TPI,COMMON,TPI/CA services and audit arrangements — requisition/technical scope,5,OFFICE,G01,,QA,2026-11-09,2026-11-14,161,PROPOSED / NOT APPROVED,Proposed allowance; replace with verified inputs
R-TPI,COMMON,TPI/CA services and audit arrangements — bid/PS review allowance,10,OFFICE,P-TPI,,QA,2026-11-16,2026-11-28,161,PROPOSED / NOT APPROVED,Proposed allowance; replace with verified inputs
D-TPI,COMMON,TPI/CA services and audit arrangements — delivery/readiness,10,ALL,R-TPI,,QA,2026-11-28,2026-12-08,161,PROPOSED / NOT APPROVED,Unverified vendor/service lead-time allowance; no quote or commitment
P-SCAF,COMMON,Scaffolding/access and temporary works supply — requisition/technical scope,5,OFFICE,G05,,Construction,2026-12-28,2027-01-02,289,PROPOSED / NOT APPROVED,Proposed allowance; replace with verified inputs
R-SCAF,COMMON,Scaffolding/access and temporary works supply — bid/PS review allowance,10,OFFICE,P-SCAF,,Construction,2027-01-04,2027-01-16,289,PROPOSED / NOT APPROVED,Proposed allowance; replace with verified inputs
D-SCAF,COMMON,Scaffolding/access and temporary works supply — delivery/readiness,25,ALL,R-SCAF,,Construction,2027-01-16,2027-02-10,291,PROPOSED / NOT APPROVED,Unverified vendor/service lead-time allowance; no quote or commitment
P-PPE,COMMON,Certified PPE and training readiness — requisition/technical scope,5,OFFICE,G01,,HSE,2026-11-09,2026-11-14,350,PROPOSED / NOT APPROVED,Proposed allowance; replace with verified inputs
R-PPE,COMMON,Certified PPE and training readiness — bid/PS review allowance,10,OFFICE,P-PPE,,HSE,2026-11-16,2026-11-28,350,PROPOSED / NOT APPROVED,Proposed allowance; replace with verified inputs
D-PPE,COMMON,Certified PPE and training readiness — delivery/readiness,15,ALL,R-PPE,,HSE,2026-11-28,2026-12-13,350,PROPOSED / NOT APPROVED,Unverified vendor/service lead-time allowance; no quote or commitment
P-TRAY,COMMON,Cable trays and support steel interfaces — requisition/technical scope,5,OFFICE,G05,,Electrical,2026-12-28,2027-01-02,326,PROPOSED / NOT APPROVED,Proposed allowance; replace with verified inputs
R-TRAY,COMMON,Cable trays and support steel interfaces — bid/PS review allowance,10,OFFICE,P-TRAY,,Electrical,2027-01-04,2027-01-16,326,PROPOSED / NOT APPROVED,Proposed allowance; replace with verified inputs
D-TRAY,COMMON,Cable trays and support steel interfaces — delivery/readiness,35,ALL,R-TRAY,,Electrical,2027-01-16,2027-02-20,328,PROPOSED / NOT APPROVED,Unverified vendor/service lead-time allowance; no quote or commitment
B05-BAS,BHS-SLQ,"Design basis, loads and interfaces",5,OFFICE,G05;D-DES,,Engineering,2026-12-28,2027-01-02,0,PROPOSED / NOT APPROVED,Proposed allowance; replace with verified inputs
B05-BRV,BHS-SLQ,Basis review and comment closure allowance,10,OFFICE,B05-BAS,,Engineering,2027-01-04,2027-01-16,0,PROPOSED / NOT APPROVED,Proposed allowance; replace with verified inputs
B05-ANA,BHS-SLQ,Bridge/platform and preservice analysis preparation,20,OFFICE,B05-BRV,,Structural,2027-01-18,2027-02-13,0,PROPOSED / NOT APPROVED,Proposed engineering effort window; native analysis/check evidence not supplied
B05-ARV,BHS-SLQ,Analysis review and comment closure allowance,10,OFFICE,B05-ANA,,Engineering,2027-02-15,2027-02-27,0,PROPOSED / NOT APPROVED,Proposed allowance; replace with verified inputs
B05-DET,BHS-SLQ,"Connection, bearing, landing and workpack detailing",15,OFFICE,B05-ARV,,Structural,2027-03-01,2027-03-20,0,PROPOSED / NOT APPROVED,Proposed allowance; replace with verified inputs
B05-DRV,BHS-SLQ,Drawing review and comment closure allowance,10,OFFICE,B05-DET,,Engineering,2027-03-22,2027-04-03,0,PROPOSED / NOT APPROVED,Proposed allowance; replace with verified inputs
B05-AFC,BHS-SLQ,AFC design/MTO independent check and release gate,0,ALL,B05-DRV,,Engineering,2027-04-03,2027-04-03,0,PROPOSED / NOT APPROVED,Gate; actual signed release not established
B05-RFQ,BHS-SLQ,"Bridge steel RFQ, evaluation and PS preparation",7,OFFICE,B05-BRV,,Procurement,2027-01-18,2027-01-27,52,PROPOSED / NOT APPROVED,Proposed allowance; replace with verified inputs
B05-PRV,BHS-SLQ,Bridge steel PS review allowance,10,OFFICE,B05-RFQ,,Procurement,2027-01-27,2027-02-10,54,PROPOSED / NOT APPROVED,Proposed allowance; replace with verified inputs
B05-PO,BHS-SLQ,Bridge steel compliant PO release gate,0,ALL,B05-AFC;B05-PRV,,Procurement,2027-04-03,2027-04-03,0,PROPOSED / NOT APPROVED,No at-risk purchase assumed; amended domestic-origin evidence required
B05-MAT,BHS-SLQ,"Mill production, inspection and steel delivery",45,ALL,B05-PO,,Procurement,2027-04-03,2027-05-18,0,PROPOSED / NOT APPROVED,"Unquoted45calendar-day placeholder; origin, mill capacity and transport unresolved"
B05-FAB,BHS-SLQ,"Fit-up, welding and dimensional control",71,YARD,B05-MAT;D-NDT;D-TPI,Fabrication line 1,Fabrication,2027-05-18,2027-08-08,0,PROPOSED / NOT APPROVED,"Assumed4MT per productive bay-day; includes aggregate steel, not validated shop productivity"
B05-NDT,BHS-SLQ,"NDT, repair allowance and dimensional release",6,YARD,B05-FAB,,QA,2027-08-09,2027-08-15,38,PROPOSED / NOT APPROVED,Proposed allowance; replace with verified inputs
B05-COA,BHS-SLQ,"Surface preparation, coating and curing allowance",10,YARD,B05-NDT;D-COAT,Coating cell,Coating,2027-08-16,2027-08-27,38,PROPOSED / NOT APPROVED,Proposed allowance; replace with verified inputs
B05-REL,BHS-SLQ,"Trial fit, verified weight/COG and loadout release",5,YARD,B05-COA,,QA / Marine,2027-08-27,2027-09-02,84,PROPOSED / NOT APPROVED,Proposed allowance; replace with verified inputs
B05-TRN,BHS-SLQ,"Loadout, transport and offshore receipt",3,OFF,B05-REL;D-CARGO,Cargo spread,Logistics,2027-10-16,2027-10-19,40,PROPOSED / NOT APPROVED,Proposed allowance; replace with verified inputs
B05-PRE,BHS-SLQ,"PTW, access, SIMOPS and work-front readiness",3,OFF,B05-TRN;D-SCAF;D-PPE,,Construction,2027-10-19,2027-10-22,40,PROPOSED / NOT APPROVED,Proposed allowance; replace with verified inputs
B05-STR,BHS-SLQ,Landing/platform pre-install strengthening,22,OFF,B05-PRE,Strength crew 1,Construction,2027-10-22,2027-11-13,40,PROPOSED / NOT APPROVED,Proposed4MT/crew-day; actual weld/access quantities not validated
B05-INS,BHS-SLQ,New bridge installation,7,OFF,B05-STR;D-MAR;D-BEAR;D-GRAT,Heavy-lift spread,Marine / Construction,2027-11-13,2027-11-20,51,PROPOSED / NOT APPROVED,Aggregate planning allowance; engineered lifts and temporary stability required
B05-SRV,BHS-SLQ,"Services transfer, test and accepted reinstatement",5,OFF,B05-INS;D-PIPE;D-ELEC;D-INST;D-TRAY,Service transfer team,Commissioning,2027-11-20,2027-11-25,55,PROPOSED / NOT APPROVED,Proposed allowance; replace with verified inputs
B05-DEM,BHS-SLQ,Engineered demolition/removal and scrap backload,14,OFF,B05-SRV,Removal team,Construction,2027-11-25,2027-12-09,70,PROPOSED / NOT APPROVED,"Proposed15MT/day allowance; BHS sequence after safe new service transfer, subject to approved method"
B05-PUN,BHS-SLQ,"Inspection, touch-up and offshore punch closure",3,OFF,B05-DEM,,QA / Commissioning,2027-12-09,2027-12-12,88,PROPOSED / NOT APPROVED,Proposed allowance; replace with verified inputs
B05-DOS,BHS-SLQ,"As-built, QA and turnover dossier acceptance",10,OFFICE,B05-PUN,,Document Control,2027-12-13,2027-12-25,87,PROPOSED / NOT APPROVED,Proposed allowance; replace with verified inputs
B02-BAS,ICW-ICG LD,"Design basis, loads and interfaces",5,OFFICE,G05;D-DES,,Engineering,2026-12-28,2027-01-02,95,PROPOSED / NOT APPROVED,Proposed allowance; replace with verified inputs
B02-BRV,ICW-ICG LD,Basis review and comment closure allowance,10,OFFICE,B02-BAS,,Engineering,2027-01-04,2027-01-16,95,PROPOSED / NOT APPROVED,Proposed allowance; replace with verified inputs
B02-ANA,ICW-ICG LD,Bridge/platform and preservice analysis preparation,20,OFFICE,B02-BRV,,Structural,2027-01-18,2027-02-13,95,PROPOSED / NOT APPROVED,Proposed engineering effort window; native analysis/check evidence not supplied
B02-ARV,ICW-ICG LD,Analysis review and comment closure allowance,10,OFFICE,B02-ANA,,Engineering,2027-02-15,2027-02-27,95,PROPOSED / NOT APPROVED,Proposed allowance; replace with verified inputs
B02-DET,ICW-ICG LD,"Connection, bearing, landing and workpack detailing",15,OFFICE,B02-ARV,,Structural,2027-03-01,2027-03-20,95,PROPOSED / NOT APPROVED,Proposed allowance; replace with verified inputs
B02-DRV,ICW-ICG LD,Drawing review and comment closure allowance,10,OFFICE,B02-DET,,Engineering,2027-03-22,2027-04-03,95,PROPOSED / NOT APPROVED,Proposed allowance; replace with verified inputs
B02-AFC,ICW-ICG LD,AFC design/MTO independent check and release gate,0,ALL,B02-DRV,,Engineering,2027-04-03,2027-04-03,97,PROPOSED / NOT APPROVED,Gate; actual signed release not established
B02-RFQ,ICW-ICG LD,"Bridge steel RFQ, evaluation and PS preparation",7,OFFICE,B02-BRV,,Procurement,2027-01-18,2027-01-27,149,PROPOSED / NOT APPROVED,Proposed allowance; replace with verified inputs
B02-PRV,ICW-ICG LD,Bridge steel PS review allowance,10,OFFICE,B02-RFQ,,Procurement,2027-01-27,2027-02-10,149,PROPOSED / NOT APPROVED,Proposed allowance; replace with verified inputs
B02-PO,ICW-ICG LD,Bridge steel compliant PO release gate,0,ALL,B02-AFC;B02-PRV,,Procurement,2027-04-03,2027-04-03,97,PROPOSED / NOT APPROVED,No at-risk purchase assumed; amended domestic-origin evidence required
B02-MAT,ICW-ICG LD,"Mill production, inspection and steel delivery",45,ALL,B02-PO,,Procurement,2027-04-03,2027-05-18,97,PROPOSED / NOT APPROVED,"Unquoted45calendar-day placeholder; origin, mill capacity and transport unresolved"
B02-FAB,ICW-ICG LD,"Fit-up, welding and dimensional control",31,YARD,B02-MAT;D-NDT;D-TPI,Fabrication line 2,Fabrication,2027-05-18,2027-06-23,97,PROPOSED / NOT APPROVED,"Assumed4MT per productive bay-day; includes aggregate steel, not validated shop productivity"
B02-NDT,ICW-ICG LD,"NDT, repair allowance and dimensional release",6,YARD,B02-FAB,,QA,2027-06-23,2027-06-30,97,PROPOSED / NOT APPROVED,Proposed allowance; replace with verified inputs
B02-COA,ICW-ICG LD,"Surface preparation, coating and curing allowance",10,YARD,B02-NDT;D-COAT;B05-COA,Coating cell,Coating,2027-08-27,2027-09-08,39,PROPOSED / NOT APPROVED,Proposed allowance; replace with verified inputs
B02-REL,ICW-ICG LD,"Trial fit, verified weight/COG and loadout release",5,YARD,B02-COA,,QA / Marine,2027-09-08,2027-09-14,89,PROPOSED / NOT APPROVED,Proposed allowance; replace with verified inputs
B02-TRN,ICW-ICG LD,"Loadout, transport and offshore receipt",3,OFF,B02-REL;D-CARGO;B05-TRN,Cargo spread,Logistics,2027-10-19,2027-10-22,53,PROPOSED / NOT APPROVED,Proposed allowance; replace with verified inputs
B02-PRE,ICW-ICG LD,"PTW, access, SIMOPS and work-front readiness",3,OFF,B02-TRN;D-SCAF;D-PPE,,Construction,2027-10-22,2027-10-25,54,PROPOSED / NOT APPROVED,Proposed allowance; replace with verified inputs
B02-STR,ICW-ICG LD,Landing/platform pre-install strengthening,17,OFF,B02-PRE,Strength crew 2,Construction,2027-10-25,2027-11-11,54,PROPOSED / NOT APPROVED,Proposed4MT/crew-day; actual weld/access quantities not validated
B02-INS,ICW-ICG LD,New bridge installation,7,OFF,B02-STR;D-MAR;D-BEAR;D-GRAT;B05-INS,Heavy-lift spread,Marine / Construction,2027-11-20,2027-11-27,51,PROPOSED / NOT APPROVED,Aggregate planning allowance; engineered lifts and temporary stability required
B02-SRV,ICW-ICG LD,"Services transfer, test and accepted reinstatement",5,OFF,B02-INS;D-PIPE;D-ELEC;D-INST;D-TRAY;B05-SRV,Service transfer team,Commissioning,2027-11-27,2027-12-02,53,PROPOSED / NOT APPROVED,Proposed allowance; replace with verified inputs
B02-DEM,ICW-ICG LD,Engineered demolition/removal and scrap backload,2,OFF,B02-SRV;B05-DEM,Removal team,Construction,2027-12-09,2027-12-11,70,PROPOSED / NOT APPROVED,"Proposed15MT/day allowance; BHS sequence after safe new service transfer, subject to approved method"
B02-PUN,ICW-ICG LD,"Inspection, touch-up and offshore punch closure",3,OFF,B02-DEM,,QA / Commissioning,2027-12-11,2027-12-14,86,PROPOSED / NOT APPROVED,Proposed allowance; replace with verified inputs
B02-DOS,ICW-ICG LD,"As-built, QA and turnover dossier acceptance",10,OFFICE,B02-PUN,,Document Control,2027-12-14,2027-12-28,86,PROPOSED / NOT APPROVED,Proposed allowance; replace with verified inputs
B04-BAS,ICG-ICP LD,"Design basis, loads and interfaces",5,OFFICE,G05;D-DES,,Engineering,2026-12-28,2027-01-02,81,PROPOSED / NOT APPROVED,Proposed allowance; replace with verified inputs
B04-BRV,ICG-ICP LD,Basis review and comment closure allowance,10,OFFICE,B04-BAS,,Engineering,2027-01-04,2027-01-16,81,PROPOSED / NOT APPROVED,Proposed allowance; replace with verified inputs
B04-ANA,ICG-ICP LD,Bridge/platform and preservice analysis preparation,20,OFFICE,B04-BRV,,Structural,2027-01-18,2027-02-13,81,PROPOSED / NOT APPROVED,Proposed engineering effort window; native analysis/check evidence not supplied
B04-ARV,ICG-ICP LD,Analysis review and comment closure allowance,10,OFFICE,B04-ANA,,Engineering,2027-02-15,2027-02-27,81,PROPOSED / NOT APPROVED,Proposed allowance; replace with verified inputs
B04-DET,ICG-ICP LD,"Connection, bearing, landing and workpack detailing",15,OFFICE,B04-ARV,,Structural,2027-03-01,2027-03-20,81,PROPOSED / NOT APPROVED,Proposed allowance; replace with verified inputs
B04-DRV,ICG-ICP LD,Drawing review and comment closure allowance,10,OFFICE,B04-DET,,Engineering,2027-03-22,2027-04-03,81,PROPOSED / NOT APPROVED,Proposed allowance; replace with verified inputs
B04-AFC,ICG-ICP LD,AFC design/MTO independent check and release gate,0,ALL,B04-DRV,,Engineering,2027-04-03,2027-04-03,83,PROPOSED / NOT APPROVED,Gate; actual signed release not established
B04-RFQ,ICG-ICP LD,"Bridge steel RFQ, evaluation and PS preparation",7,OFFICE,B04-BRV,,Procurement,2027-01-18,2027-01-27,135,PROPOSED / NOT APPROVED,Proposed allowance; replace with verified inputs
B04-PRV,ICG-ICP LD,Bridge steel PS review allowance,10,OFFICE,B04-RFQ,,Procurement,2027-01-27,2027-02-10,135,PROPOSED / NOT APPROVED,Proposed allowance; replace with verified inputs
B04-PO,ICG-ICP LD,Bridge steel compliant PO release gate,0,ALL,B04-AFC;B04-PRV,,Procurement,2027-04-03,2027-04-03,83,PROPOSED / NOT APPROVED,No at-risk purchase assumed; amended domestic-origin evidence required
B04-MAT,ICG-ICP LD,"Mill production, inspection and steel delivery",45,ALL,B04-PO,,Procurement,2027-04-03,2027-05-18,83,PROPOSED / NOT APPROVED,"Unquoted45calendar-day placeholder; origin, mill capacity and transport unresolved"
B04-FAB,ICG-ICP LD,"Fit-up, welding and dimensional control",40,YARD,B04-MAT;D-NDT;D-TPI;B05-FAB,Fabrication line 1,Fabrication,2027-08-09,2027-09-24,0,PROPOSED / NOT APPROVED,"Assumed4MT per productive bay-day; includes aggregate steel, not validated shop productivity"
B04-NDT,ICG-ICP LD,"NDT, repair allowance and dimensional release",6,YARD,B04-FAB,,QA,2027-09-24,2027-10-01,15,PROPOSED / NOT APPROVED,Proposed allowance; replace with verified inputs
B04-COA,ICG-ICP LD,"Surface preparation, coating and curing allowance",10,YARD,B04-NDT;D-COAT;B02-COA,Coating cell,Coating,2027-10-01,2027-10-13,15,PROPOSED / NOT APPROVED,Proposed allowance; replace with verified inputs
B04-REL,ICG-ICP LD,"Trial fit, verified weight/COG and loadout release",5,YARD,B04-COA,,QA / Marine,2027-10-13,2027-10-19,56,PROPOSED / NOT APPROVED,Proposed allowance; replace with verified inputs
B04-TRN,ICG-ICP LD,"Loadout, transport and offshore receipt",3,OFF,B04-REL;D-CARGO;B02-TRN,Cargo spread,Logistics,2027-10-22,2027-10-25,53,PROPOSED / NOT APPROVED,Proposed allowance; replace with verified inputs
B04-PRE,ICG-ICP LD,"PTW, access, SIMOPS and work-front readiness",3,OFF,B04-TRN;D-SCAF;D-PPE,,Construction,2027-10-25,2027-10-28,66,PROPOSED / NOT APPROVED,Proposed allowance; replace with verified inputs
B04-STR,ICG-ICP LD,Landing/platform pre-install strengthening,12,OFF,B04-PRE,Strength crew 3,Construction,2027-10-28,2027-11-09,66,PROPOSED / NOT APPROVED,Proposed4MT/crew-day; actual weld/access quantities not validated
B04-INS,ICG-ICP LD,New bridge installation,7,OFF,B04-STR;D-MAR;D-BEAR;D-GRAT;B02-INS,Heavy-lift spread,Marine / Construction,2027-11-27,2027-12-04,51,PROPOSED / NOT APPROVED,Aggregate planning allowance; engineered lifts and temporary stability required
B04-SRV,ICG-ICP LD,"Services transfer, test and accepted reinstatement",5,OFF,B04-INS;D-PIPE;D-ELEC;D-INST;D-TRAY;B02-SRV,Service transfer team,Commissioning,2027-12-04,2027-12-09,51,PROPOSED / NOT APPROVED,Proposed allowance; replace with verified inputs
B04-DEM,ICG-ICP LD,Engineered demolition/removal and scrap backload,2,OFF,B04-SRV;B02-DEM,Removal team,Construction,2027-12-11,2027-12-13,70,PROPOSED / NOT APPROVED,"Proposed15MT/day allowance; BHS sequence after safe new service transfer, subject to approved method"
B04-PUN,ICG-ICP LD,"Inspection, touch-up and offshore punch closure",3,OFF,B04-DEM,,QA / Commissioning,2027-12-13,2027-12-16,84,PROPOSED / NOT APPROVED,Proposed allowance; replace with verified inputs
B04-DOS,ICG-ICP LD,"As-built, QA and turnover dossier acceptance",10,OFFICE,B04-PUN,,Document Control,2027-12-16,2027-12-30,84,PROPOSED / NOT APPROVED,Proposed allowance; replace with verified inputs
B01-BAS,ICW-ICG UD,"Design basis, loads and interfaces",5,OFFICE,G05;D-DES,,Engineering,2026-12-28,2027-01-02,150,PROPOSED / NOT APPROVED,Proposed allowance; replace with verified inputs
B01-BRV,ICW-ICG UD,Basis review and comment closure allowance,10,OFFICE,B01-BAS,,Engineering,2027-01-04,2027-01-16,150,PROPOSED / NOT APPROVED,Proposed allowance; replace with verified inputs
B01-ANA,ICW-ICG UD,Bridge/platform and preservice analysis preparation,12,OFFICE,B01-BRV,,Structural,2027-01-18,2027-02-03,150,PROPOSED / NOT APPROVED,Proposed engineering effort window; native analysis/check evidence not supplied
B01-ARV,ICW-ICG UD,Analysis review and comment closure allowance,10,OFFICE,B01-ANA,,Engineering,2027-02-03,2027-02-17,152,PROPOSED / NOT APPROVED,Proposed allowance; replace with verified inputs
B01-DET,ICW-ICG UD,"Connection, bearing, landing and workpack detailing",10,OFFICE,B01-ARV,,Structural,2027-02-17,2027-03-03,152,PROPOSED / NOT APPROVED,Proposed allowance; replace with verified inputs
B01-DRV,ICW-ICG UD,Drawing review and comment closure allowance,10,OFFICE,B01-DET,,Engineering,2027-03-03,2027-03-17,152,PROPOSED / NOT APPROVED,Proposed allowance; replace with verified inputs
B01-AFC,ICW-ICG UD,AFC design/MTO independent check and release gate,0,ALL,B01-DRV,,Engineering,2027-03-17,2027-03-17,152,PROPOSED / NOT APPROVED,Gate; actual signed release not established
B01-RFQ,ICW-ICG UD,"Bridge steel RFQ, evaluation and PS preparation",7,OFFICE,B01-BRV,,Procurement,2027-01-18,2027-01-27,185,PROPOSED / NOT APPROVED,Proposed allowance; replace with verified inputs
B01-PRV,ICW-ICG UD,Bridge steel PS review allowance,10,OFFICE,B01-RFQ,,Procurement,2027-01-27,2027-02-10,187,PROPOSED / NOT APPROVED,Proposed allowance; replace with verified inputs
B01-PO,ICW-ICG UD,Bridge steel compliant PO release gate,0,ALL,B01-AFC;B01-PRV,,Procurement,2027-03-17,2027-03-17,152,PROPOSED / NOT APPROVED,No at-risk purchase assumed; amended domestic-origin evidence required
B01-MAT,ICW-ICG UD,"Mill production, inspection and steel delivery",45,ALL,B01-PO,,Procurement,2027-03-17,2027-05-01,152,PROPOSED / NOT APPROVED,"Unquoted45calendar-day placeholder; origin, mill capacity and transport unresolved"
B01-FAB,ICW-ICG UD,"Fit-up, welding and dimensional control",13,YARD,B01-MAT;D-NDT;D-TPI;B02-FAB,Fabrication line 2,Fabrication,2027-06-23,2027-07-08,99,PROPOSED / NOT APPROVED,"Assumed4MT per productive bay-day; includes aggregate steel, not validated shop productivity"
B01-NDT,ICW-ICG UD,"NDT, repair allowance and dimensional release",6,YARD,B01-FAB,,QA,2027-07-08,2027-07-15,105,PROPOSED / NOT APPROVED,Proposed allowance; replace with verified inputs
B01-COA,ICW-ICG UD,"Surface preparation, coating and curing allowance",10,YARD,B01-NDT;D-COAT;B04-COA,Coating cell,Coating,2027-10-13,2027-10-24,15,PROPOSED / NOT APPROVED,Proposed allowance; replace with verified inputs
B01-REL,ICW-ICG UD,"Trial fit, verified weight/COG and loadout release",5,YARD,B01-COA,,QA / Marine,2027-10-25,2027-10-30,47,PROPOSED / NOT APPROVED,Proposed allowance; replace with verified inputs
B01-TRN,ICW-ICG UD,"Loadout, transport and offshore receipt",3,OFF,B01-REL;D-CARGO;B04-TRN,Cargo spread,Logistics,2027-10-30,2027-11-02,48,PROPOSED / NOT APPROVED,Proposed allowance; replace with verified inputs
B01-PRE,ICW-ICG UD,"PTW, access, SIMOPS and work-front readiness",3,OFF,B01-TRN;D-SCAF;D-PPE,,Construction,2027-11-02,2027-11-05,48,PROPOSED / NOT APPROVED,Proposed allowance; replace with verified inputs
B01-STR,ICW-ICG UD,Landing/platform pre-install strengthening,8,OFF,B01-PRE;B05-STR,Strength crew 1,Construction,2027-11-13,2027-11-21,40,PROPOSED / NOT APPROVED,Proposed4MT/crew-day; actual weld/access quantities not validated
B01-INS,ICW-ICG UD,Bridge strengthening and replacement items,5,OFF,B01-STR;D-MAR;D-BEAR;D-GRAT,Strength crew 1,Marine / Construction,2027-11-21,2027-11-26,40,PROPOSED / NOT APPROVED,Aggregate planning allowance; engineered lifts and temporary stability required
B01-SRV,ICW-ICG UD,"Services transfer, test and accepted reinstatement",5,OFF,B01-INS;D-PIPE;D-ELEC;D-INST;D-TRAY;B04-SRV,Service transfer team,Commissioning,2027-12-09,2027-12-14,51,PROPOSED / NOT APPROVED,Proposed allowance; replace with verified inputs
B01-DEM,ICW-ICG UD,Engineered demolition/removal and scrap backload,2,OFF,B01-SRV;B04-DEM,Removal team,Construction,2027-12-14,2027-12-16,69,PROPOSED / NOT APPROVED,"Proposed15MT/day allowance; BHS sequence after safe new service transfer, subject to approved method"
B01-PUN,ICW-ICG UD,"Inspection, touch-up and offshore punch closure",3,OFF,B01-DEM,,QA / Commissioning,2027-12-16,2027-12-19,81,PROPOSED / NOT APPROVED,Proposed allowance; replace with verified inputs
B01-DOS,ICW-ICG UD,"As-built, QA and turnover dossier acceptance",10,OFFICE,B01-PUN,,Document Control,2027-12-20,2028-01-01,80,PROPOSED / NOT APPROVED,Proposed allowance; replace with verified inputs
B03-BAS,ICG-ICP UD,"Design basis, loads and interfaces",5,OFFICE,G05;D-DES,,Engineering,2026-12-28,2027-01-02,144,PROPOSED / NOT APPROVED,Proposed allowance; replace with verified inputs
B03-BRV,ICG-ICP UD,Basis review and comment closure allowance,10,OFFICE,B03-BAS,,Engineering,2027-01-04,2027-01-16,144,PROPOSED / NOT APPROVED,Proposed allowance; replace with verified inputs
B03-ANA,ICG-ICP UD,Bridge/platform and preservice analysis preparation,12,OFFICE,B03-BRV,,Structural,2027-01-18,2027-02-03,144,PROPOSED / NOT APPROVED,Proposed engineering effort window; native analysis/check evidence not supplied
B03-ARV,ICG-ICP UD,Analysis review and comment closure allowance,10,OFFICE,B03-ANA,,Engineering,2027-02-03,2027-02-17,146,PROPOSED / NOT APPROVED,Proposed allowance; replace with verified inputs
B03-DET,ICG-ICP UD,"Connection, bearing, landing and workpack detailing",10,OFFICE,B03-ARV,,Structural,2027-02-17,2027-03-03,146,PROPOSED / NOT APPROVED,Proposed allowance; replace with verified inputs
B03-DRV,ICG-ICP UD,Drawing review and comment closure allowance,10,OFFICE,B03-DET,,Engineering,2027-03-03,2027-03-17,146,PROPOSED / NOT APPROVED,Proposed allowance; replace with verified inputs
B03-AFC,ICG-ICP UD,AFC design/MTO independent check and release gate,0,ALL,B03-DRV,,Engineering,2027-03-17,2027-03-17,146,PROPOSED / NOT APPROVED,Gate; actual signed release not established
B03-RFQ,ICG-ICP UD,"Bridge steel RFQ, evaluation and PS preparation",7,OFFICE,B03-BRV,,Procurement,2027-01-18,2027-01-27,179,PROPOSED / NOT APPROVED,Proposed allowance; replace with verified inputs
B03-PRV,ICG-ICP UD,Bridge steel PS review allowance,10,OFFICE,B03-RFQ,,Procurement,2027-01-27,2027-02-10,181,PROPOSED / NOT APPROVED,Proposed allowance; replace with verified inputs
B03-PO,ICG-ICP UD,Bridge steel compliant PO release gate,0,ALL,B03-AFC;B03-PRV,,Procurement,2027-03-17,2027-03-17,146,PROPOSED / NOT APPROVED,No at-risk purchase assumed; amended domestic-origin evidence required
B03-MAT,ICG-ICP UD,"Mill production, inspection and steel delivery",45,ALL,B03-PO,,Procurement,2027-03-17,2027-05-01,146,PROPOSED / NOT APPROVED,"Unquoted45calendar-day placeholder; origin, mill capacity and transport unresolved"
B03-FAB,ICG-ICP UD,"Fit-up, welding and dimensional control",29,YARD,B03-MAT;D-NDT;D-TPI;B04-FAB,Fabrication line 1,Fabrication,2027-09-24,2027-10-28,0,PROPOSED / NOT APPROVED,"Assumed4MT per productive bay-day; includes aggregate steel, not validated shop productivity"
B03-NDT,ICG-ICP UD,"NDT, repair allowance and dimensional release",6,YARD,B03-FAB,,QA,2027-10-28,2027-11-04,5,PROPOSED / NOT APPROVED,Proposed allowance; replace with verified inputs
B03-COA,ICG-ICP UD,"Surface preparation, coating and curing allowance",10,YARD,B03-NDT;D-COAT;B01-COA,Coating cell,Coating,2027-11-04,2027-11-16,5,PROPOSED / NOT APPROVED,Proposed allowance; replace with verified inputs
B03-REL,ICG-ICP UD,"Trial fit, verified weight/COG and loadout release",5,YARD,B03-COA,,QA / Marine,2027-11-16,2027-11-21,32,PROPOSED / NOT APPROVED,Proposed allowance; replace with verified inputs
B03-TRN,ICG-ICP UD,"Loadout, transport and offshore receipt",3,OFF,B03-REL;D-CARGO;B01-TRN,Cargo spread,Logistics,2027-11-21,2027-11-24,33,PROPOSED / NOT APPROVED,Proposed allowance; replace with verified inputs
B03-PRE,ICG-ICP UD,"PTW, access, SIMOPS and work-front readiness",3,OFF,B03-TRN;D-SCAF;D-PPE,,Construction,2027-11-24,2027-11-27,38,PROPOSED / NOT APPROVED,Proposed allowance; replace with verified inputs
B03-STR,ICG-ICP UD,Landing/platform pre-install strengthening,8,OFF,B03-PRE;B02-STR,Strength crew 2,Construction,2027-11-27,2027-12-05,38,PROPOSED / NOT APPROVED,Proposed4MT/crew-day; actual weld/access quantities not validated
B03-INS,ICG-ICP UD,Bridge strengthening and replacement items,22,OFF,B03-STR;D-MAR;D-BEAR;D-GRAT,Strength crew 2,Marine / Construction,2027-12-05,2027-12-27,38,PROPOSED / NOT APPROVED,Aggregate planning allowance; engineered lifts and temporary stability required
B03-SRV,ICG-ICP UD,"Services transfer, test and accepted reinstatement",5,OFF,B03-INS;D-PIPE;D-ELEC;D-INST;D-TRAY;B01-SRV,Service transfer team,Commissioning,2027-12-27,2028-01-01,38,PROPOSED / NOT APPROVED,Proposed allowance; replace with verified inputs
B03-DEM,ICG-ICP UD,Engineered demolition/removal and scrap backload,2,OFF,B03-SRV;B01-DEM,Removal team,Construction,2028-01-01,2028-01-03,53,PROPOSED / NOT APPROVED,"Proposed15MT/day allowance; BHS sequence after safe new service transfer, subject to approved method"
B03-PUN,ICG-ICP UD,"Inspection, touch-up and offshore punch closure",3,OFF,B03-DEM,,QA / Commissioning,2028-01-03,2028-01-06,63,PROPOSED / NOT APPROVED,Proposed allowance; replace with verified inputs
B03-DOS,ICG-ICP UD,"As-built, QA and turnover dossier acceptance",10,OFFICE,B03-PUN,,Document Control,2028-01-06,2028-01-20,63,PROPOSED / NOT APPROVED,Proposed allowance; replace with verified inputs
B06-BAS,SLQ-WIS,"Design basis, loads and interfaces",5,OFFICE,G05;D-DES,,Engineering,2026-12-28,2027-01-02,165,PROPOSED / NOT APPROVED,Proposed allowance; replace with verified inputs
B06-BRV,SLQ-WIS,Basis review and comment closure allowance,10,OFFICE,B06-BAS,,Engineering,2027-01-04,2027-01-16,165,PROPOSED / NOT APPROVED,Proposed allowance; replace with verified inputs
B06-ANA,SLQ-WIS,Bridge/platform and preservice analysis preparation,12,OFFICE,B06-BRV,,Structural,2027-01-18,2027-02-03,165,PROPOSED / NOT APPROVED,Proposed engineering effort window; native analysis/check evidence not supplied
B06-ARV,SLQ-WIS,Analysis review and comment closure allowance,10,OFFICE,B06-ANA,,Engineering,2027-02-03,2027-02-17,167,PROPOSED / NOT APPROVED,Proposed allowance; replace with verified inputs
B06-DET,SLQ-WIS,"Connection, bearing, landing and workpack detailing",10,OFFICE,B06-ARV,,Structural,2027-02-17,2027-03-03,167,PROPOSED / NOT APPROVED,Proposed allowance; replace with verified inputs
B06-DRV,SLQ-WIS,Drawing review and comment closure allowance,10,OFFICE,B06-DET,,Engineering,2027-03-03,2027-03-17,167,PROPOSED / NOT APPROVED,Proposed allowance; replace with verified inputs
B06-AFC,SLQ-WIS,AFC design/MTO independent check and release gate,0,ALL,B06-DRV,,Engineering,2027-03-17,2027-03-17,167,PROPOSED / NOT APPROVED,Gate; actual signed release not established
B06-RFQ,SLQ-WIS,"Bridge steel RFQ, evaluation and PS preparation",7,OFFICE,B06-BRV,,Procurement,2027-01-18,2027-01-27,200,PROPOSED / NOT APPROVED,Proposed allowance; replace with verified inputs
B06-PRV,SLQ-WIS,Bridge steel PS review allowance,10,OFFICE,B06-RFQ,,Procurement,2027-01-27,2027-02-10,202,PROPOSED / NOT APPROVED,Proposed allowance; replace with verified inputs
B06-PO,SLQ-WIS,Bridge steel compliant PO release gate,0,ALL,B06-AFC;B06-PRV,,Procurement,2027-03-17,2027-03-17,167,PROPOSED / NOT APPROVED,No at-risk purchase assumed; amended domestic-origin evidence required
B06-MAT,SLQ-WIS,"Mill production, inspection and steel delivery",45,ALL,B06-PO,,Procurement,2027-03-17,2027-05-01,167,PROPOSED / NOT APPROVED,"Unquoted45calendar-day placeholder; origin, mill capacity and transport unresolved"
B06-FAB,SLQ-WIS,"Fit-up, welding and dimensional control",23,YARD,B06-MAT;D-NDT;D-TPI;B01-FAB,Fabrication line 2,Fabrication,2027-07-08,2027-08-04,99,PROPOSED / NOT APPROVED,"Assumed4MT per productive bay-day; includes aggregate steel, not validated shop productivity"
B06-NDT,SLQ-WIS,"NDT, repair allowance and dimensional release",6,YARD,B06-FAB,,QA,2027-08-04,2027-08-11,101,PROPOSED / NOT APPROVED,Proposed allowance; replace with verified inputs
B06-COA,SLQ-WIS,"Surface preparation, coating and curing allowance",10,YARD,B06-NDT;D-COAT;B03-COA,Coating cell,Coating,2027-11-16,2027-11-27,4,PROPOSED / NOT APPROVED,Proposed allowance; replace with verified inputs
B06-REL,SLQ-WIS,"Trial fit, verified weight/COG and loadout release",5,YARD,B06-COA,,QA / Marine,2027-11-27,2027-12-03,24,PROPOSED / NOT APPROVED,Proposed allowance; replace with verified inputs
B06-TRN,SLQ-WIS,"Loadout, transport and offshore receipt",3,OFF,B06-REL;D-CARGO;B03-TRN,Cargo spread,Logistics,2027-12-03,2027-12-06,24,PROPOSED / NOT APPROVED,Proposed allowance; replace with verified inputs
B06-PRE,SLQ-WIS,"PTW, access, SIMOPS and work-front readiness",3,OFF,B06-TRN;D-SCAF;D-PPE,,Construction,2027-12-06,2027-12-09,36,PROPOSED / NOT APPROVED,Proposed allowance; replace with verified inputs
B06-STR,SLQ-WIS,Landing/platform pre-install strengthening,8,OFF,B06-PRE;B04-STR,Strength crew 3,Construction,2027-12-09,2027-12-17,36,PROPOSED / NOT APPROVED,Proposed4MT/crew-day; actual weld/access quantities not validated
B06-INS,SLQ-WIS,Bridge strengthening and replacement items,16,OFF,B06-STR;D-MAR;D-BEAR;D-GRAT,Strength crew 3,Marine / Construction,2027-12-17,2028-01-02,36,PROPOSED / NOT APPROVED,Aggregate planning allowance; engineered lifts and temporary stability required
B06-SRV,SLQ-WIS,"Services transfer, test and accepted reinstatement",5,OFF,B06-INS;D-PIPE;D-ELEC;D-INST;D-TRAY;B03-SRV,Service transfer team,Commissioning,2028-01-02,2028-01-07,37,PROPOSED / NOT APPROVED,Proposed allowance; replace with verified inputs
B06-DEM,SLQ-WIS,Engineered demolition/removal and scrap backload,2,OFF,B06-SRV;B03-DEM,Removal team,Construction,2028-01-07,2028-01-09,49,PROPOSED / NOT APPROVED,"Proposed15MT/day allowance; BHS sequence after safe new service transfer, subject to approved method"
B06-PUN,SLQ-WIS,"Inspection, touch-up and offshore punch closure",3,OFF,B06-DEM,,QA / Commissioning,2028-01-09,2028-01-12,57,PROPOSED / NOT APPROVED,Proposed allowance; replace with verified inputs
B06-DOS,SLQ-WIS,"As-built, QA and turnover dossier acceptance",10,OFFICE,B06-PUN,,Document Control,2028-01-12,2028-01-26,57,PROPOSED / NOT APPROVED,Proposed allowance; replace with verified inputs
B07-BAS,NQO-NQD,"Design basis, loads and interfaces",5,OFFICE,G05;D-DES,,Engineering,2026-12-28,2027-01-02,178,PROPOSED / NOT APPROVED,Proposed allowance; replace with verified inputs
B07-BRV,NQO-NQD,Basis review and comment closure allowance,10,OFFICE,B07-BAS,,Engineering,2027-01-04,2027-01-16,178,PROPOSED / NOT APPROVED,Proposed allowance; replace with verified inputs
B07-ANA,NQO-NQD,Bridge/platform and preservice analysis preparation,12,OFFICE,B07-BRV,,Structural,2027-01-18,2027-02-03,178,PROPOSED / NOT APPROVED,Proposed engineering effort window; native analysis/check evidence not supplied
B07-ARV,NQO-NQD,Analysis review and comment closure allowance,10,OFFICE,B07-ANA,,Engineering,2027-02-03,2027-02-17,180,PROPOSED / NOT APPROVED,Proposed allowance; replace with verified inputs
B07-DET,NQO-NQD,"Connection, bearing, landing and workpack detailing",10,OFFICE,B07-ARV,,Structural,2027-02-17,2027-03-03,180,PROPOSED / NOT APPROVED,Proposed allowance; replace with verified inputs
B07-DRV,NQO-NQD,Drawing review and comment closure allowance,10,OFFICE,B07-DET,,Engineering,2027-03-03,2027-03-17,180,PROPOSED / NOT APPROVED,Proposed allowance; replace with verified inputs
B07-AFC,NQO-NQD,AFC design/MTO independent check and release gate,0,ALL,B07-DRV,,Engineering,2027-03-17,2027-03-17,180,PROPOSED / NOT APPROVED,Gate; actual signed release not established
B07-RFQ,NQO-NQD,"Bridge steel RFQ, evaluation and PS preparation",7,OFFICE,B07-BRV,,Procurement,2027-01-18,2027-01-27,213,PROPOSED / NOT APPROVED,Proposed allowance; replace with verified inputs
B07-PRV,NQO-NQD,Bridge steel PS review allowance,10,OFFICE,B07-RFQ,,Procurement,2027-01-27,2027-02-10,215,PROPOSED / NOT APPROVED,Proposed allowance; replace with verified inputs
B07-PO,NQO-NQD,Bridge steel compliant PO release gate,0,ALL,B07-AFC;B07-PRV,,Procurement,2027-03-17,2027-03-17,180,PROPOSED / NOT APPROVED,No at-risk purchase assumed; amended domestic-origin evidence required
B07-MAT,NQO-NQD,"Mill production, inspection and steel delivery",45,ALL,B07-PO,,Procurement,2027-03-17,2027-05-01,180,PROPOSED / NOT APPROVED,"Unquoted45calendar-day placeholder; origin, mill capacity and transport unresolved"
B07-FAB,NQO-NQD,"Fit-up, welding and dimensional control",24,YARD,B07-MAT;D-NDT;D-TPI;B03-FAB,Fabrication line 1,Fabrication,2027-10-28,2027-11-25,0,PROPOSED / NOT APPROVED,"Assumed4MT per productive bay-day; includes aggregate steel, not validated shop productivity"
B07-NDT,NQO-NQD,"NDT, repair allowance and dimensional release",6,YARD,B07-FAB,,QA,2027-11-25,2027-12-02,0,PROPOSED / NOT APPROVED,Proposed allowance; replace with verified inputs
B07-COA,NQO-NQD,"Surface preparation, coating and curing allowance",10,YARD,B07-NDT;D-COAT;B06-COA,Coating cell,Coating,2027-12-02,2027-12-14,0,PROPOSED / NOT APPROVED,Proposed allowance; replace with verified inputs
B07-REL,NQO-NQD,"Trial fit, verified weight/COG and loadout release",5,YARD,B07-COA,,QA / Marine,2027-12-14,2027-12-19,10,PROPOSED / NOT APPROVED,Proposed allowance; replace with verified inputs
B07-TRN,NQO-NQD,"Loadout, transport and offshore receipt",3,OFF,B07-REL;D-CARGO;B06-TRN,Cargo spread,Logistics,2027-12-19,2027-12-22,11,PROPOSED / NOT APPROVED,Proposed allowance; replace with verified inputs
B07-PRE,NQO-NQD,"PTW, access, SIMOPS and work-front readiness",3,OFF,B07-TRN;D-SCAF;D-PPE,,Construction,2027-12-22,2027-12-25,11,PROPOSED / NOT APPROVED,Proposed allowance; replace with verified inputs
B07-STR,NQO-NQD,Landing/platform pre-install strengthening,8,OFF,B07-PRE;B01-INS,Strength crew 1,Construction,2027-12-25,2028-01-02,11,PROPOSED / NOT APPROVED,Proposed4MT/crew-day; actual weld/access quantities not validated
B07-INS,NQO-NQD,Bridge strengthening and replacement items,16,OFF,B07-STR;D-MAR;D-BEAR;D-GRAT,Strength crew 1,Marine / Construction,2028-01-02,2028-01-18,11,PROPOSED / NOT APPROVED,Aggregate planning allowance; engineered lifts and temporary stability required
B07-SRV,NQO-NQD,"Services transfer, test and accepted reinstatement",5,OFF,B07-INS;D-PIPE;D-ELEC;D-INST;D-TRAY;B06-SRV,Service transfer team,Commissioning,2028-01-18,2028-01-23,26,PROPOSED / NOT APPROVED,Proposed allowance; replace with verified inputs
B07-DEM,NQO-NQD,Engineered demolition/removal and scrap backload,2,OFF,B07-SRV;B06-DEM,Removal team,Construction,2028-01-23,2028-01-25,35,PROPOSED / NOT APPROVED,"Proposed15MT/day allowance; BHS sequence after safe new service transfer, subject to approved method"
B07-PUN,NQO-NQD,"Inspection, touch-up and offshore punch closure",3,OFF,B07-DEM,,QA / Commissioning,2028-01-25,2028-01-28,41,PROPOSED / NOT APPROVED,Proposed allowance; replace with verified inputs
B07-DOS,NQO-NQD,"As-built, QA and turnover dossier acceptance",10,OFFICE,B07-PUN,,Document Control,2028-01-28,2028-02-11,41,PROPOSED / NOT APPROVED,Proposed allowance; replace with verified inputs
B08-BAS,WIN-NC,"Design basis, loads and interfaces",5,OFFICE,G05;D-DES,,Engineering,2026-12-28,2027-01-02,192,PROPOSED / NOT APPROVED,Proposed allowance; replace with verified inputs
B08-BRV,WIN-NC,Basis review and comment closure allowance,10,OFFICE,B08-BAS,,Engineering,2027-01-04,2027-01-16,192,PROPOSED / NOT APPROVED,Proposed allowance; replace with verified inputs
B08-ANA,WIN-NC,Bridge/platform and preservice analysis preparation,12,OFFICE,B08-BRV,,Structural,2027-01-18,2027-02-03,192,PROPOSED / NOT APPROVED,Proposed engineering effort window; native analysis/check evidence not supplied
B08-ARV,WIN-NC,Analysis review and comment closure allowance,10,OFFICE,B08-ANA,,Engineering,2027-02-03,2027-02-17,194,PROPOSED / NOT APPROVED,Proposed allowance; replace with verified inputs
B08-DET,WIN-NC,"Connection, bearing, landing and workpack detailing",10,OFFICE,B08-ARV,,Structural,2027-02-17,2027-03-03,194,PROPOSED / NOT APPROVED,Proposed allowance; replace with verified inputs
B08-DRV,WIN-NC,Drawing review and comment closure allowance,10,OFFICE,B08-DET,,Engineering,2027-03-03,2027-03-17,194,PROPOSED / NOT APPROVED,Proposed allowance; replace with verified inputs
B08-AFC,WIN-NC,AFC design/MTO independent check and release gate,0,ALL,B08-DRV,,Engineering,2027-03-17,2027-03-17,194,PROPOSED / NOT APPROVED,Gate; actual signed release not established
B08-RFQ,WIN-NC,"Bridge steel RFQ, evaluation and PS preparation",7,OFFICE,B08-BRV,,Procurement,2027-01-18,2027-01-27,227,PROPOSED / NOT APPROVED,Proposed allowance; replace with verified inputs
B08-PRV,WIN-NC,Bridge steel PS review allowance,10,OFFICE,B08-RFQ,,Procurement,2027-01-27,2027-02-10,229,PROPOSED / NOT APPROVED,Proposed allowance; replace with verified inputs
B08-PO,WIN-NC,Bridge steel compliant PO release gate,0,ALL,B08-AFC;B08-PRV,,Procurement,2027-03-17,2027-03-17,194,PROPOSED / NOT APPROVED,No at-risk purchase assumed; amended domestic-origin evidence required
B08-MAT,WIN-NC,"Mill production, inspection and steel delivery",45,ALL,B08-PO,,Procurement,2027-03-17,2027-05-01,194,PROPOSED / NOT APPROVED,"Unquoted45calendar-day placeholder; origin, mill capacity and transport unresolved"
B08-FAB,WIN-NC,"Fit-up, welding and dimensional control",12,YARD,B08-MAT;D-NDT;D-TPI;B06-FAB,Fabrication line 2,Fabrication,2027-08-04,2027-08-18,99,PROPOSED / NOT APPROVED,"Assumed4MT per productive bay-day; includes aggregate steel, not validated shop productivity"
B08-NDT,WIN-NC,"NDT, repair allowance and dimensional release",6,YARD,B08-FAB,,QA,2027-08-18,2027-08-25,111,PROPOSED / NOT APPROVED,Proposed allowance; replace with verified inputs
B08-COA,WIN-NC,"Surface preparation, coating and curing allowance",10,YARD,B08-NDT;D-COAT;B07-COA,Coating cell,Coating,2027-12-14,2027-12-25,0,PROPOSED / NOT APPROVED,Proposed allowance; replace with verified inputs
B08-REL,WIN-NC,"Trial fit, verified weight/COG and loadout release",5,YARD,B08-COA,,QA / Marine,2027-12-25,2027-12-31,17,PROPOSED / NOT APPROVED,Proposed allowance; replace with verified inputs
B08-TRN,WIN-NC,"Loadout, transport and offshore receipt",3,OFF,B08-REL;D-CARGO;B07-TRN,Cargo spread,Logistics,2027-12-31,2028-01-03,17,PROPOSED / NOT APPROVED,Proposed allowance; replace with verified inputs
B08-PRE,WIN-NC,"PTW, access, SIMOPS and work-front readiness",3,OFF,B08-TRN;D-SCAF;D-PPE,,Construction,2028-01-03,2028-01-06,28,PROPOSED / NOT APPROVED,Proposed allowance; replace with verified inputs
B08-STR,WIN-NC,Landing/platform pre-install strengthening,10,OFF,B08-PRE;B03-INS,Strength crew 2,Construction,2028-01-06,2028-01-16,28,PROPOSED / NOT APPROVED,Proposed4MT/crew-day; actual weld/access quantities not validated
B08-INS,WIN-NC,Bridge strengthening and replacement items,5,OFF,B08-STR;D-MAR;D-BEAR;D-GRAT,Strength crew 2,Marine / Construction,2028-01-16,2028-01-21,28,PROPOSED / NOT APPROVED,Aggregate planning allowance; engineered lifts and temporary stability required
B08-SRV,WIN-NC,"Services transfer, test and accepted reinstatement",5,OFF,B08-INS;D-PIPE;D-ELEC;D-INST;D-TRAY;B07-SRV,Service transfer team,Commissioning,2028-01-23,2028-01-28,26,PROPOSED / NOT APPROVED,Proposed allowance; replace with verified inputs
B08-DEM,WIN-NC,Engineered demolition/removal and scrap backload,2,OFF,B08-SRV;B07-DEM,Removal team,Construction,2028-01-28,2028-01-30,32,PROPOSED / NOT APPROVED,"Proposed15MT/day allowance; BHS sequence after safe new service transfer, subject to approved method"
B08-PUN,WIN-NC,"Inspection, touch-up and offshore punch closure",3,OFF,B08-DEM,,QA / Commissioning,2028-01-30,2028-02-02,36,PROPOSED / NOT APPROVED,Proposed allowance; replace with verified inputs
B08-DOS,WIN-NC,"As-built, QA and turnover dossier acceptance",10,OFFICE,B08-PUN,,Document Control,2028-02-02,2028-02-16,36,PROPOSED / NOT APPROVED,Proposed allowance; replace with verified inputs
B09-BAS,SCA-SC1,"Design basis, loads and interfaces",5,OFFICE,G05;D-DES,,Engineering,2026-12-28,2027-01-02,213,PROPOSED / NOT APPROVED,Proposed allowance; replace with verified inputs
B09-BRV,SCA-SC1,Basis review and comment closure allowance,10,OFFICE,B09-BAS,,Engineering,2027-01-04,2027-01-16,213,PROPOSED / NOT APPROVED,Proposed allowance; replace with verified inputs
B09-ANA,SCA-SC1,Bridge/platform and preservice analysis preparation,12,OFFICE,B09-BRV,,Structural,2027-01-18,2027-02-03,213,PROPOSED / NOT APPROVED,Proposed engineering effort window; native analysis/check evidence not supplied
B09-ARV,SCA-SC1,Analysis review and comment closure allowance,10,OFFICE,B09-ANA,,Engineering,2027-02-03,2027-02-17,215,PROPOSED / NOT APPROVED,Proposed allowance; replace with verified inputs
B09-DET,SCA-SC1,"Connection, bearing, landing and workpack detailing",10,OFFICE,B09-ARV,,Structural,2027-02-17,2027-03-03,215,PROPOSED / NOT APPROVED,Proposed allowance; replace with verified inputs
B09-DRV,SCA-SC1,Drawing review and comment closure allowance,10,OFFICE,B09-DET,,Engineering,2027-03-03,2027-03-17,215,PROPOSED / NOT APPROVED,Proposed allowance; replace with verified inputs
B09-AFC,SCA-SC1,AFC design/MTO independent check and release gate,0,ALL,B09-DRV,,Engineering,2027-03-17,2027-03-17,213,PROPOSED / NOT APPROVED,Gate; actual signed release not established
B09-RFQ,SCA-SC1,"Bridge steel RFQ, evaluation and PS preparation",7,OFFICE,B09-BRV,,Procurement,2027-01-18,2027-01-27,248,PROPOSED / NOT APPROVED,Proposed allowance; replace with verified inputs
B09-PRV,SCA-SC1,Bridge steel PS review allowance,10,OFFICE,B09-RFQ,,Procurement,2027-01-27,2027-02-10,250,PROPOSED / NOT APPROVED,Proposed allowance; replace with verified inputs
B09-PO,SCA-SC1,Bridge steel compliant PO release gate,0,ALL,B09-AFC;B09-PRV,,Procurement,2027-03-17,2027-03-17,213,PROPOSED / NOT APPROVED,No at-risk purchase assumed; amended domestic-origin evidence required
B09-MAT,SCA-SC1,"Mill production, inspection and steel delivery",45,ALL,B09-PO,,Procurement,2027-03-17,2027-05-01,213,PROPOSED / NOT APPROVED,"Unquoted45calendar-day placeholder; origin, mill capacity and transport unresolved"
B09-FAB,SCA-SC1,"Fit-up, welding and dimensional control",16,YARD,B09-MAT;D-NDT;D-TPI;B07-FAB,Fabrication line 1,Fabrication,2027-11-25,2027-12-14,5,PROPOSED / NOT APPROVED,"Assumed4MT per productive bay-day; includes aggregate steel, not validated shop productivity"
B09-NDT,SCA-SC1,"NDT, repair allowance and dimensional release",6,YARD,B09-FAB,,QA,2027-12-14,2027-12-21,4,PROPOSED / NOT APPROVED,Proposed allowance; replace with verified inputs
B09-COA,SCA-SC1,"Surface preparation, coating and curing allowance",10,YARD,B09-NDT;D-COAT;B08-COA,Coating cell,Coating,2027-12-25,2028-01-06,0,PROPOSED / NOT APPROVED,Proposed allowance; replace with verified inputs
B09-REL,SCA-SC1,"Trial fit, verified weight/COG and loadout release",5,YARD,B09-COA,,QA / Marine,2028-01-06,2028-01-12,8,PROPOSED / NOT APPROVED,Proposed allowance; replace with verified inputs
B09-TRN,SCA-SC1,"Loadout, transport and offshore receipt",3,OFF,B09-REL;D-CARGO;B08-TRN,Cargo spread,Logistics,2028-01-12,2028-01-15,8,PROPOSED / NOT APPROVED,Proposed allowance; replace with verified inputs
B09-PRE,SCA-SC1,"PTW, access, SIMOPS and work-front readiness",3,OFF,B09-TRN;D-SCAF;D-PPE,,Construction,2028-01-15,2028-01-18,20,PROPOSED / NOT APPROVED,Proposed allowance; replace with verified inputs
B09-STR,SCA-SC1,Landing/platform pre-install strengthening,7,OFF,B09-PRE;B06-INS,Strength crew 3,Construction,2028-01-18,2028-01-25,20,PROPOSED / NOT APPROVED,Proposed4MT/crew-day; actual weld/access quantities not validated
B09-INS,SCA-SC1,Bridge strengthening and replacement items,9,OFF,B09-STR;D-MAR;D-BEAR;D-GRAT,Strength crew 3,Marine / Construction,2028-01-25,2028-02-03,20,PROPOSED / NOT APPROVED,Aggregate planning allowance; engineered lifts and temporary stability required
B09-SRV,SCA-SC1,"Services transfer, test and accepted reinstatement",5,OFF,B09-INS;D-PIPE;D-ELEC;D-INST;D-TRAY;B08-SRV,Service transfer team,Commissioning,2028-02-03,2028-02-08,20,PROPOSED / NOT APPROVED,Proposed allowance; replace with verified inputs
B09-DEM,SCA-SC1,Engineered demolition/removal and scrap backload,2,OFF,B09-SRV;B08-DEM,Removal team,Construction,2028-02-08,2028-02-10,23,PROPOSED / NOT APPROVED,"Proposed15MT/day allowance; BHS sequence after safe new service transfer, subject to approved method"
B09-PUN,SCA-SC1,"Inspection, touch-up and offshore punch closure",3,OFF,B09-DEM,,QA / Commissioning,2028-02-10,2028-02-13,25,PROPOSED / NOT APPROVED,Proposed allowance; replace with verified inputs
B09-DOS,SCA-SC1,"As-built, QA and turnover dossier acceptance",10,OFFICE,B09-PUN,,Document Control,2028-02-14,2028-02-26,24,PROPOSED / NOT APPROVED,Proposed allowance; replace with verified inputs
B10-BAS,SCA-SCF,"Design basis, loads and interfaces",5,OFFICE,G05;D-DES,,Engineering,2026-12-28,2027-01-02,206,PROPOSED / NOT APPROVED,Proposed allowance; replace with verified inputs
B10-BRV,SCA-SCF,Basis review and comment closure allowance,10,OFFICE,B10-BAS,,Engineering,2027-01-04,2027-01-16,206,PROPOSED / NOT APPROVED,Proposed allowance; replace with verified inputs
B10-ANA,SCA-SCF,Bridge/platform and preservice analysis preparation,12,OFFICE,B10-BRV,,Structural,2027-01-18,2027-02-03,206,PROPOSED / NOT APPROVED,Proposed engineering effort window; native analysis/check evidence not supplied
B10-ARV,SCA-SCF,Analysis review and comment closure allowance,10,OFFICE,B10-ANA,,Engineering,2027-02-03,2027-02-17,208,PROPOSED / NOT APPROVED,Proposed allowance; replace with verified inputs
B10-DET,SCA-SCF,"Connection, bearing, landing and workpack detailing",10,OFFICE,B10-ARV,,Structural,2027-02-17,2027-03-03,208,PROPOSED / NOT APPROVED,Proposed allowance; replace with verified inputs
B10-DRV,SCA-SCF,Drawing review and comment closure allowance,10,OFFICE,B10-DET,,Engineering,2027-03-03,2027-03-17,208,PROPOSED / NOT APPROVED,Proposed allowance; replace with verified inputs
B10-AFC,SCA-SCF,AFC design/MTO independent check and release gate,0,ALL,B10-DRV,,Engineering,2027-03-17,2027-03-17,208,PROPOSED / NOT APPROVED,Gate; actual signed release not established
B10-RFQ,SCA-SCF,"Bridge steel RFQ, evaluation and PS preparation",7,OFFICE,B10-BRV,,Procurement,2027-01-18,2027-01-27,241,PROPOSED / NOT APPROVED,Proposed allowance; replace with verified inputs
B10-PRV,SCA-SCF,Bridge steel PS review allowance,10,OFFICE,B10-RFQ,,Procurement,2027-01-27,2027-02-10,243,PROPOSED / NOT APPROVED,Proposed allowance; replace with verified inputs
B10-PO,SCA-SCF,Bridge steel compliant PO release gate,0,ALL,B10-AFC;B10-PRV,,Procurement,2027-03-17,2027-03-17,208,PROPOSED / NOT APPROVED,No at-risk purchase assumed; amended domestic-origin evidence required
B10-MAT,SCA-SCF,"Mill production, inspection and steel delivery",45,ALL,B10-PO,,Procurement,2027-03-17,2027-05-01,208,PROPOSED / NOT APPROVED,"Unquoted45calendar-day placeholder; origin, mill capacity and transport unresolved"
B10-FAB,SCA-SCF,"Fit-up, welding and dimensional control",30,YARD,B10-MAT;D-NDT;D-TPI;B08-FAB,Fabrication line 2,Fabrication,2027-08-18,2027-09-22,99,PROPOSED / NOT APPROVED,"Assumed4MT per productive bay-day; includes aggregate steel, not validated shop productivity"
B10-NDT,SCA-SCF,"NDT, repair allowance and dimensional release",6,YARD,B10-FAB,,QA,2027-09-22,2027-09-29,99,PROPOSED / NOT APPROVED,Proposed allowance; replace with verified inputs
B10-COA,SCA-SCF,"Surface preparation, coating and curing allowance",10,YARD,B10-NDT;D-COAT;B09-COA,Coating cell,Coating,2028-01-06,2028-01-18,0,PROPOSED / NOT APPROVED,Proposed allowance; replace with verified inputs
B10-REL,SCA-SCF,"Trial fit, verified weight/COG and loadout release",5,YARD,B10-COA,,QA / Marine,2028-01-18,2028-01-23,0,PROPOSED / NOT APPROVED,Proposed allowance; replace with verified inputs
B10-TRN,SCA-SCF,"Loadout, transport and offshore receipt",3,OFF,B10-REL;D-CARGO;B09-TRN,Cargo spread,Logistics,2028-01-23,2028-01-26,0,PROPOSED / NOT APPROVED,Proposed allowance; replace with verified inputs
B10-PRE,SCA-SCF,"PTW, access, SIMOPS and work-front readiness",3,OFF,B10-TRN;D-SCAF;D-PPE,,Construction,2028-01-26,2028-01-29,0,PROPOSED / NOT APPROVED,Proposed allowance; replace with verified inputs
B10-STR,SCA-SCF,Landing/platform pre-install strengthening,7,OFF,B10-PRE;B07-INS,Strength crew 1,Construction,2028-01-29,2028-02-05,0,PROPOSED / NOT APPROVED,Proposed4MT/crew-day; actual weld/access quantities not validated
B10-INS,SCA-SCF,Bridge strengthening and replacement items,23,OFF,B10-STR;D-MAR;D-BEAR;D-GRAT,Strength crew 1,Marine / Construction,2028-02-05,2028-02-28,0,PROPOSED / NOT APPROVED,Aggregate planning allowance; engineered lifts and temporary stability required
B10-SRV,SCA-SCF,"Services transfer, test and accepted reinstatement",5,OFF,B10-INS;D-PIPE;D-ELEC;D-INST;D-TRAY;B09-SRV,Service transfer team,Commissioning,2028-02-28,2028-03-04,0,PROPOSED / NOT APPROVED,Proposed allowance; replace with verified inputs
B10-DEM,SCA-SCF,Engineered demolition/removal and scrap backload,2,OFF,B10-SRV;B09-DEM,Removal team,Construction,2028-03-04,2028-03-06,0,PROPOSED / NOT APPROVED,"Proposed15MT/day allowance; BHS sequence after safe new service transfer, subject to approved method"
B10-PUN,SCA-SCF,"Inspection, touch-up and offshore punch closure",3,OFF,B10-DEM,,QA / Commissioning,2028-03-06,2028-03-09,0,PROPOSED / NOT APPROVED,Proposed allowance; replace with verified inputs
B10-DOS,SCA-SCF,"As-built, QA and turnover dossier acceptance",10,OFFICE,B10-PUN,,Document Control,2028-03-09,2028-03-23,0,PROPOSED / NOT APPROVED,Proposed allowance; replace with verified inputs
OFFDONE,COMMON,All bridge offshore work completed,0,ALL,B05-PUN;B02-PUN;B04-PUN;B01-PUN;B03-PUN;B06-PUN;B07-PUN;B08-PUN;B09-PUN;B10-PUN,,Project Manager,2028-03-09,2028-03-09,9,PROPOSED / NOT APPROVED,Proposed allowance; replace with verified inputs
DEMOB,COMMON,Spread demobilisation allowance,5,OFF,OFFDONE;B10-TRN,Cargo spread,Marine,2028-03-09,2028-03-14,9,PROPOSED / NOT APPROVED,Proposed allowance; replace with verified inputs
CLOSE,COMMON,"Integrated acceptance, final measurements and account preparation",10,OFFICE,B05-DOS;B02-DOS;B04-DOS;B01-DOS;B03-DOS;B06-DOS;B07-DOS;B08-DOS;B09-DOS;B10-DOS;DEMOB,,Project Manager,2028-03-23,2028-04-06,0,PROPOSED / NOT APPROVED,Proposed allowance; replace with verified inputs
FINISH,COMMON,Proposed contract-completion milestone,0,ALL,CLOSE,,Project Director,2028-04-06,2028-04-06,0,PROPOSED / NOT APPROVED,Proposed allowance; replace with verified inputs
