ID,Bridge,Activity,Duration,Calendar,Predecessors,Resource,Owner,Start,Finish exclusive,Total float calendar days,Status,Basis
START,COMMON,Assumed commencement — scenario only,0,ALL,,,Contracts,2026-11-01,2026-11-01,71,PROPOSED / NOT APPROVED,1Nov2026 assumed; actual NOA unconfirmed
G01,COMMON,Contract/amendment matrix and scope reconciliation,5,OFFICE,START,,Contracts,2026-11-02,2026-11-07,70,PROPOSED / NOT APPROVED,Proposed allowance; replace with verified inputs
G02,COMMON,"Survey permits, access and mobilisation preparation",10,OFFICE,G01,,Survey / Operations,2026-11-09,2026-11-21,70,PROPOSED / NOT APPROVED,Proposed allowance; replace with verified inputs
G03,COMMON,Pre-engineering survey campaign,15,OFF,G02;D-SURV,Survey spread,Survey,2026-11-21,2026-12-06,71,PROPOSED / NOT APPROVED,Proposed allowance; replace with verified inputs
G04,COMMON,"Survey reports, geometry/condition reconciliation",5,OFFICE,G03,,Engineering,2026-12-07,2026-12-12,70,PROPOSED / NOT APPROVED,Proposed allowance; replace with verified inputs
G05,COMMON,Survey/basis review and comment closure allowance,10,OFFICE,G04,,Engineering,2026-12-14,2026-12-26,70,PROPOSED / NOT APPROVED,Proposed allowance; replace with verified inputs
P-BEAR,COMMON,"Bearings, sliding interfaces and guides — requisition/technical scope",5,OFFICE,G05,,Engineering,2026-12-28,2027-01-02,274,PROPOSED / NOT APPROVED,Proposed allowance; replace with verified inputs
R-BEAR,COMMON,"Bearings, sliding interfaces and guides — bid/PS review allowance",10,OFFICE,P-BEAR,,Engineering,2027-01-04,2027-01-16,274,PROPOSED / NOT APPROVED,Proposed allowance; replace with verified inputs
D-BEAR,COMMON,"Bearings, sliding interfaces and guides — delivery/readiness",35,ALL,R-BEAR,,Engineering,2027-01-16,2027-02-20,276,PROPOSED / NOT APPROVED,Unverified vendor/service lead-time allowance; no quote or commitment
P-GRAT,COMMON,"Grating, handrail and GI sheet supply — requisition/technical scope",5,OFFICE,G05,,Procurement,2026-12-28,2027-01-02,274,PROPOSED / NOT APPROVED,Proposed allowance; replace with verified inputs
R-GRAT,COMMON,"Grating, handrail and GI sheet supply — bid/PS review allowance",10,OFFICE,P-GRAT,,Procurement,2027-01-04,2027-01-16,274,PROPOSED / NOT APPROVED,Proposed allowance; replace with verified inputs
D-GRAT,COMMON,"Grating, handrail and GI sheet supply — delivery/readiness",35,ALL,R-GRAT,,Procurement,2027-01-16,2027-02-20,276,PROPOSED / NOT APPROVED,Unverified vendor/service lead-time allowance; no quote or commitment
P-PIPE,COMMON,"Piping tie-ins, fittings and supports — requisition/technical scope",5,OFFICE,G05,,Piping,2026-12-28,2027-01-02,280,PROPOSED / NOT APPROVED,Proposed allowance; replace with verified inputs
R-PIPE,COMMON,"Piping tie-ins, fittings and supports — bid/PS review allowance",10,OFFICE,P-PIPE,,Piping,2027-01-04,2027-01-16,280,PROPOSED / NOT APPROVED,Proposed allowance; replace with verified inputs
D-PIPE,COMMON,"Piping tie-ins, fittings and supports — delivery/readiness",45,ALL,R-PIPE,,Piping,2027-01-16,2027-03-02,280,PROPOSED / NOT APPROVED,Unverified vendor/service lead-time allowance; no quote or commitment
P-ELEC,COMMON,Electrical materials and bonding — requisition/technical scope,5,OFFICE,G05,,Electrical,2026-12-28,2027-01-02,283,PROPOSED / NOT APPROVED,Proposed allowance; replace with verified inputs
R-ELEC,COMMON,Electrical materials and bonding — bid/PS review allowance,10,OFFICE,P-ELEC,,Electrical,2027-01-04,2027-01-16,283,PROPOSED / NOT APPROVED,Proposed allowance; replace with verified inputs
D-ELEC,COMMON,Electrical materials and bonding — delivery/readiness,40,ALL,R-ELEC,,Electrical,2027-01-16,2027-02-25,285,PROPOSED / NOT APPROVED,Unverified vendor/service lead-time allowance; no quote or commitment
P-INST,COMMON,Instrumentation/cable interface materials — requisition/technical scope,5,OFFICE,G05,,Instrumentation,2026-12-28,2027-01-02,283,PROPOSED / NOT APPROVED,Proposed allowance; replace with verified inputs
R-INST,COMMON,Instrumentation/cable interface materials — bid/PS review allowance,10,OFFICE,P-INST,,Instrumentation,2027-01-04,2027-01-16,283,PROPOSED / NOT APPROVED,Proposed allowance; replace with verified inputs
D-INST,COMMON,Instrumentation/cable interface materials — delivery/readiness,40,ALL,R-INST,,Instrumentation,2027-01-16,2027-02-25,285,PROPOSED / NOT APPROVED,Unverified vendor/service lead-time allowance; no quote or commitment
P-COAT,COMMON,Qualified coating system supply — requisition/technical scope,5,OFFICE,G05,,Coating,2026-12-28,2027-01-02,185,PROPOSED / NOT APPROVED,Proposed allowance; replace with verified inputs
R-COAT,COMMON,Qualified coating system supply — bid/PS review allowance,10,OFFICE,P-COAT,,Coating,2027-01-04,2027-01-16,185,PROPOSED / NOT APPROVED,Proposed allowance; replace with verified inputs
D-COAT,COMMON,Qualified coating system supply — delivery/readiness,25,ALL,R-COAT,,Coating,2027-01-16,2027-02-10,187,PROPOSED / NOT APPROVED,Unverified vendor/service lead-time allowance; no quote or commitment
P-NDT,COMMON,"NDT, welding qualification and consumables — requisition/technical scope",5,OFFICE,G05,,QA,2026-12-28,2027-01-02,141,PROPOSED / NOT APPROVED,Proposed allowance; replace with verified inputs
R-NDT,COMMON,"NDT, welding qualification and consumables — bid/PS review allowance",10,OFFICE,P-NDT,,QA,2027-01-04,2027-01-16,141,PROPOSED / NOT APPROVED,Proposed allowance; replace with verified inputs
D-NDT,COMMON,"NDT, welding qualification and consumables — delivery/readiness",20,ALL,R-NDT,,QA,2027-01-16,2027-02-05,143,PROPOSED / NOT APPROVED,Unverified vendor/service lead-time allowance; no quote or commitment
P-MAR,COMMON,Heavy-lift and accommodation spread readiness — requisition/technical scope,5,OFFICE,G05,,Marine,2026-12-28,2027-01-02,266,PROPOSED / NOT APPROVED,Proposed allowance; replace with verified inputs
R-MAR,COMMON,Heavy-lift and accommodation spread readiness — bid/PS review allowance,10,OFFICE,P-MAR,,Marine,2027-01-04,2027-01-16,266,PROPOSED / NOT APPROVED,Proposed allowance; replace with verified inputs
D-MAR,COMMON,Heavy-lift and accommodation spread readiness — delivery/readiness,45,ALL,R-MAR,,Marine,2027-01-16,2027-03-02,266,PROPOSED / NOT APPROVED,Unverified vendor/service lead-time allowance; no quote or commitment
P-CARGO,COMMON,Cargo vessel and shore-base readiness — requisition/technical scope,5,OFFICE,G05,,Logistics,2026-12-28,2027-01-02,248,PROPOSED / NOT APPROVED,Proposed allowance; replace with verified inputs
R-CARGO,COMMON,Cargo vessel and shore-base readiness — bid/PS review allowance,10,OFFICE,P-CARGO,,Logistics,2027-01-04,2027-01-16,248,PROPOSED / NOT APPROVED,Proposed allowance; replace with verified inputs
D-CARGO,COMMON,Cargo vessel and shore-base readiness — delivery/readiness,25,ALL,R-CARGO,,Logistics,2027-01-16,2027-02-10,250,PROPOSED / NOT APPROVED,Unverified vendor/service lead-time allowance; no quote or commitment
P-SURV,COMMON,Survey services mobilisation — requisition/technical scope,2,OFFICE,G01,,Survey,2026-11-09,2026-11-11,71,PROPOSED / NOT APPROVED,Proposed allowance; replace with verified inputs
R-SURV,COMMON,Survey services mobilisation — bid/PS review allowance,3,OFFICE,P-SURV,,Survey,2026-11-11,2026-11-14,71,PROPOSED / NOT APPROVED,Proposed allowance; replace with verified inputs
D-SURV,COMMON,Survey services mobilisation — delivery/readiness,5,ALL,R-SURV,,Survey,2026-11-14,2026-11-19,73,PROPOSED / NOT APPROVED,Unverified vendor/service lead-time allowance; no quote or commitment
P-DES,COMMON,Design agency capacity confirmation — requisition/technical scope,5,OFFICE,G01,,Engineering,2026-11-09,2026-11-14,88,PROPOSED / NOT APPROVED,Proposed allowance; replace with verified inputs
R-DES,COMMON,Design agency capacity confirmation — bid/PS review allowance,10,OFFICE,P-DES,,Engineering,2026-11-16,2026-11-28,88,PROPOSED / NOT APPROVED,Proposed allowance; replace with verified inputs
D-DES,COMMON,Design agency capacity confirmation — delivery/readiness,10,ALL,R-DES,,Engineering,2026-11-28,2026-12-08,90,PROPOSED / NOT APPROVED,Unverified vendor/service lead-time allowance; no quote or commitment
P-TPI,COMMON,TPI/CA services and audit arrangements — requisition/technical scope,5,OFFICE,G01,,QA,2026-11-09,2026-11-14,200,PROPOSED / NOT APPROVED,Proposed allowance; replace with verified inputs
R-TPI,COMMON,TPI/CA services and audit arrangements — bid/PS review allowance,10,OFFICE,P-TPI,,QA,2026-11-16,2026-11-28,200,PROPOSED / NOT APPROVED,Proposed allowance; replace with verified inputs
D-TPI,COMMON,TPI/CA services and audit arrangements — delivery/readiness,10,ALL,R-TPI,,QA,2026-11-28,2026-12-08,202,PROPOSED / NOT APPROVED,Unverified vendor/service lead-time allowance; no quote or commitment
P-SCAF,COMMON,Scaffolding/access and temporary works supply — requisition/technical scope,5,OFFICE,G05,,Construction,2026-12-28,2027-01-02,252,PROPOSED / NOT APPROVED,Proposed allowance; replace with verified inputs
R-SCAF,COMMON,Scaffolding/access and temporary works supply — bid/PS review allowance,10,OFFICE,P-SCAF,,Construction,2027-01-04,2027-01-16,252,PROPOSED / NOT APPROVED,Proposed allowance; replace with verified inputs
D-SCAF,COMMON,Scaffolding/access and temporary works supply — delivery/readiness,25,ALL,R-SCAF,,Construction,2027-01-16,2027-02-10,253,PROPOSED / NOT APPROVED,Unverified vendor/service lead-time allowance; no quote or commitment
P-PPE,COMMON,Certified PPE and training readiness — requisition/technical scope,5,OFFICE,G01,,HSE,2026-11-09,2026-11-14,310,PROPOSED / NOT APPROVED,Proposed allowance; replace with verified inputs
R-PPE,COMMON,Certified PPE and training readiness — bid/PS review allowance,10,OFFICE,P-PPE,,HSE,2026-11-16,2026-11-28,310,PROPOSED / NOT APPROVED,Proposed allowance; replace with verified inputs
D-PPE,COMMON,Certified PPE and training readiness — delivery/readiness,15,ALL,R-PPE,,HSE,2026-11-28,2026-12-13,312,PROPOSED / NOT APPROVED,Unverified vendor/service lead-time allowance; no quote or commitment
P-TRAY,COMMON,Cable trays and support steel interfaces — requisition/technical scope,5,OFFICE,G05,,Electrical,2026-12-28,2027-01-02,288,PROPOSED / NOT APPROVED,Proposed allowance; replace with verified inputs
R-TRAY,COMMON,Cable trays and support steel interfaces — bid/PS review allowance,10,OFFICE,P-TRAY,,Electrical,2027-01-04,2027-01-16,288,PROPOSED / NOT APPROVED,Proposed allowance; replace with verified inputs
D-TRAY,COMMON,Cable trays and support steel interfaces — delivery/readiness,35,ALL,R-TRAY,,Electrical,2027-01-16,2027-02-20,290,PROPOSED / NOT APPROVED,Unverified vendor/service lead-time allowance; no quote or commitment
B05-BAS,BHS-SLQ,"Design basis, loads and interfaces",5,OFFICE,G05;D-DES,,Engineering,2026-12-28,2027-01-02,70,PROPOSED / NOT APPROVED,Proposed allowance; replace with verified inputs
B05-BRV,BHS-SLQ,Basis review and comment closure allowance,10,OFFICE,B05-BAS,,Engineering,2027-01-04,2027-01-16,70,PROPOSED / NOT APPROVED,Proposed allowance; replace with verified inputs
B05-ANA,BHS-SLQ,Bridge/platform and preservice analysis preparation,20,OFFICE,B05-BRV,,Structural,2027-01-18,2027-02-13,70,PROPOSED / NOT APPROVED,Proposed engineering effort window; native analysis/check evidence not supplied
B05-ARV,BHS-SLQ,Analysis review and comment closure allowance,10,OFFICE,B05-ANA,,Engineering,2027-02-15,2027-02-27,70,PROPOSED / NOT APPROVED,Proposed allowance; replace with verified inputs
B05-DET,BHS-SLQ,"Connection, bearing, landing and workpack detailing",15,OFFICE,B05-ARV,,Structural,2027-03-01,2027-03-20,70,PROPOSED / NOT APPROVED,Proposed allowance; replace with verified inputs
B05-DRV,BHS-SLQ,Drawing review and comment closure allowance,10,OFFICE,B05-DET,,Engineering,2027-03-22,2027-04-03,70,PROPOSED / NOT APPROVED,Proposed allowance; replace with verified inputs
B05-AFC,BHS-SLQ,AFC design/MTO independent check and release gate,0,ALL,B05-DRV,,Engineering,2027-04-03,2027-04-03,71,PROPOSED / NOT APPROVED,Gate; actual signed release not established
B05-RFQ,BHS-SLQ,"Bridge steel RFQ, evaluation and PS preparation",7,OFFICE,B05-BRV,,Procurement,2027-01-18,2027-01-27,122,PROPOSED / NOT APPROVED,Proposed allowance; replace with verified inputs
B05-PRV,BHS-SLQ,Bridge steel PS review allowance,10,OFFICE,B05-RFQ,,Procurement,2027-01-27,2027-02-10,124,PROPOSED / NOT APPROVED,Proposed allowance; replace with verified inputs
B05-PO,BHS-SLQ,Bridge steel compliant PO release gate,0,ALL,B05-AFC;B05-PRV,,Procurement,2027-04-03,2027-04-03,71,PROPOSED / NOT APPROVED,No at-risk purchase assumed; amended domestic-origin evidence required
B05-MAT,BHS-SLQ,"Mill production, inspection and steel delivery",15,ALL,B05-PO,,Procurement,2027-04-03,2027-04-18,71,PROPOSED / NOT APPROVED,"Unquoted45calendar-day placeholder; origin, mill capacity and transport unresolved"
B05-FAB,BHS-SLQ,"Fit-up, welding and dimensional control",36,YARD,B05-MAT;D-NDT;D-TPI,Fabrication line 1,Fabrication,2027-04-19,2027-05-30,70,PROPOSED / NOT APPROVED,"Assumed4MT per productive bay-day; includes aggregate steel, not validated shop productivity"
B05-NDT,BHS-SLQ,"NDT, repair allowance and dimensional release",6,YARD,B05-FAB,,QA,2027-05-31,2027-06-06,70,PROPOSED / NOT APPROVED,Proposed allowance; replace with verified inputs
B05-COA,BHS-SLQ,"Surface preparation, coating and curing allowance",10,YARD,B05-NDT;D-COAT,Coating cell,Coating,2027-06-07,2027-06-18,70,PROPOSED / NOT APPROVED,Proposed allowance; replace with verified inputs
B05-REL,BHS-SLQ,"Trial fit, verified weight/COG and loadout release",5,YARD,B05-COA,,QA / Marine,2027-06-18,2027-06-24,116,PROPOSED / NOT APPROVED,Proposed allowance; replace with verified inputs
B05-TRN,BHS-SLQ,"Loadout, transport and offshore receipt",3,OFF,B05-REL;D-CARGO,Cargo spread,Logistics,2027-10-16,2027-10-19,2,PROPOSED / NOT APPROVED,Proposed allowance; replace with verified inputs
B05-PRE,BHS-SLQ,"PTW, access, SIMOPS and work-front readiness",3,OFF,B05-TRN;D-SCAF;D-PPE,,Construction,2027-10-19,2027-10-22,2,PROPOSED / NOT APPROVED,Proposed allowance; replace with verified inputs
B05-STR,BHS-SLQ,Landing/platform pre-install strengthening,22,OFF,B05-PRE,Strength crew 1,Construction,2027-10-22,2027-11-13,2,PROPOSED / NOT APPROVED,Proposed4MT/crew-day; actual weld/access quantities not validated
B05-INS,BHS-SLQ,New bridge installation,7,OFF,B05-STR;D-MAR;D-BEAR;D-GRAT,Heavy-lift spread,Marine / Construction,2027-11-13,2027-11-20,13,PROPOSED / NOT APPROVED,Aggregate planning allowance; engineered lifts and temporary stability required
B05-SRV,BHS-SLQ,"Services transfer, test and accepted reinstatement",5,OFF,B05-INS;D-PIPE;D-ELEC;D-INST;D-TRAY,Service transfer team,Commissioning,2027-11-20,2027-11-25,17,PROPOSED / NOT APPROVED,Proposed allowance; replace with verified inputs
B05-DEM,BHS-SLQ,Engineered demolition/removal and scrap backload,14,OFF,B05-SRV,Removal team,Construction,2027-11-25,2027-12-09,32,PROPOSED / NOT APPROVED,"Proposed15MT/day allowance; BHS sequence after safe new service transfer, subject to approved method"
B05-PUN,BHS-SLQ,"Inspection, touch-up and offshore punch closure",3,OFF,B05-DEM,,QA / Commissioning,2027-12-09,2027-12-12,50,PROPOSED / NOT APPROVED,Proposed allowance; replace with verified inputs
B05-DOS,BHS-SLQ,"As-built, QA and turnover dossier acceptance",10,OFFICE,B05-PUN,,Document Control,2027-12-13,2027-12-25,49,PROPOSED / NOT APPROVED,Proposed allowance; replace with verified inputs
B02-BAS,ICW-ICG LD,"Design basis, loads and interfaces",5,OFFICE,G05;D-DES,,Engineering,2026-12-28,2027-01-02,105,PROPOSED / NOT APPROVED,Proposed allowance; replace with verified inputs
B02-BRV,ICW-ICG LD,Basis review and comment closure allowance,10,OFFICE,B02-BAS,,Engineering,2027-01-04,2027-01-16,105,PROPOSED / NOT APPROVED,Proposed allowance; replace with verified inputs
B02-ANA,ICW-ICG LD,Bridge/platform and preservice analysis preparation,20,OFFICE,B02-BRV,,Structural,2027-01-18,2027-02-13,105,PROPOSED / NOT APPROVED,Proposed engineering effort window; native analysis/check evidence not supplied
B02-ARV,ICW-ICG LD,Analysis review and comment closure allowance,10,OFFICE,B02-ANA,,Engineering,2027-02-15,2027-02-27,105,PROPOSED / NOT APPROVED,Proposed allowance; replace with verified inputs
B02-DET,ICW-ICG LD,"Connection, bearing, landing and workpack detailing",15,OFFICE,B02-ARV,,Structural,2027-03-01,2027-03-20,105,PROPOSED / NOT APPROVED,Proposed allowance; replace with verified inputs
B02-DRV,ICW-ICG LD,Drawing review and comment closure allowance,10,OFFICE,B02-DET,,Engineering,2027-03-22,2027-04-03,105,PROPOSED / NOT APPROVED,Proposed allowance; replace with verified inputs
B02-AFC,ICW-ICG LD,AFC design/MTO independent check and release gate,0,ALL,B02-DRV,,Engineering,2027-04-03,2027-04-03,106,PROPOSED / NOT APPROVED,Gate; actual signed release not established
B02-RFQ,ICW-ICG LD,"Bridge steel RFQ, evaluation and PS preparation",7,OFFICE,B02-BRV,,Procurement,2027-01-18,2027-01-27,157,PROPOSED / NOT APPROVED,Proposed allowance; replace with verified inputs
B02-PRV,ICW-ICG LD,Bridge steel PS review allowance,10,OFFICE,B02-RFQ,,Procurement,2027-01-27,2027-02-10,159,PROPOSED / NOT APPROVED,Proposed allowance; replace with verified inputs
B02-PO,ICW-ICG LD,Bridge steel compliant PO release gate,0,ALL,B02-AFC;B02-PRV,,Procurement,2027-04-03,2027-04-03,106,PROPOSED / NOT APPROVED,No at-risk purchase assumed; amended domestic-origin evidence required
B02-MAT,ICW-ICG LD,"Mill production, inspection and steel delivery",15,ALL,B02-PO,,Procurement,2027-04-03,2027-04-18,106,PROPOSED / NOT APPROVED,"Unquoted45calendar-day placeholder; origin, mill capacity and transport unresolved"
B02-FAB,ICW-ICG LD,"Fit-up, welding and dimensional control",16,YARD,B02-MAT;D-NDT;D-TPI,Fabrication line 2,Fabrication,2027-04-19,2027-05-07,105,PROPOSED / NOT APPROVED,"Assumed4MT per productive bay-day; includes aggregate steel, not validated shop productivity"
B02-NDT,ICW-ICG LD,"NDT, repair allowance and dimensional release",6,YARD,B02-FAB,,QA,2027-05-07,2027-05-14,105,PROPOSED / NOT APPROVED,Proposed allowance; replace with verified inputs
B02-COA,ICW-ICG LD,"Surface preparation, coating and curing allowance",10,YARD,B02-NDT;D-COAT;B05-COA,Coating cell,Coating,2027-06-18,2027-06-30,70,PROPOSED / NOT APPROVED,Proposed allowance; replace with verified inputs
B02-REL,ICW-ICG LD,"Trial fit, verified weight/COG and loadout release",5,YARD,B02-COA,,QA / Marine,2027-06-30,2027-07-06,120,PROPOSED / NOT APPROVED,Proposed allowance; replace with verified inputs
B02-TRN,ICW-ICG LD,"Loadout, transport and offshore receipt",3,OFF,B02-REL;D-CARGO;B05-TRN,Cargo spread,Logistics,2027-10-19,2027-10-22,15,PROPOSED / NOT APPROVED,Proposed allowance; replace with verified inputs
B02-PRE,ICW-ICG LD,"PTW, access, SIMOPS and work-front readiness",3,OFF,B02-TRN;D-SCAF;D-PPE,,Construction,2027-10-22,2027-10-25,16,PROPOSED / NOT APPROVED,Proposed allowance; replace with verified inputs
B02-STR,ICW-ICG LD,Landing/platform pre-install strengthening,17,OFF,B02-PRE,Strength crew 2,Construction,2027-10-25,2027-11-11,16,PROPOSED / NOT APPROVED,Proposed4MT/crew-day; actual weld/access quantities not validated
B02-INS,ICW-ICG LD,New bridge installation,7,OFF,B02-STR;D-MAR;D-BEAR;D-GRAT;B05-INS,Heavy-lift spread,Marine / Construction,2027-11-20,2027-11-27,13,PROPOSED / NOT APPROVED,Aggregate planning allowance; engineered lifts and temporary stability required
B02-SRV,ICW-ICG LD,"Services transfer, test and accepted reinstatement",5,OFF,B02-INS;D-PIPE;D-ELEC;D-INST;D-TRAY;B05-SRV,Service transfer team,Commissioning,2027-11-27,2027-12-02,15,PROPOSED / NOT APPROVED,Proposed allowance; replace with verified inputs
B02-DEM,ICW-ICG LD,Engineered demolition/removal and scrap backload,2,OFF,B02-SRV;B05-DEM,Removal team,Construction,2027-12-09,2027-12-11,32,PROPOSED / NOT APPROVED,"Proposed15MT/day allowance; BHS sequence after safe new service transfer, subject to approved method"
B02-PUN,ICW-ICG LD,"Inspection, touch-up and offshore punch closure",3,OFF,B02-DEM,,QA / Commissioning,2027-12-11,2027-12-14,48,PROPOSED / NOT APPROVED,Proposed allowance; replace with verified inputs
B02-DOS,ICW-ICG LD,"As-built, QA and turnover dossier acceptance",10,OFFICE,B02-PUN,,Document Control,2027-12-14,2027-12-28,48,PROPOSED / NOT APPROVED,Proposed allowance; replace with verified inputs
B04-BAS,ICG-ICP LD,"Design basis, loads and interfaces",5,OFFICE,G05;D-DES,,Engineering,2026-12-28,2027-01-02,112,PROPOSED / NOT APPROVED,Proposed allowance; replace with verified inputs
B04-BRV,ICG-ICP LD,Basis review and comment closure allowance,10,OFFICE,B04-BAS,,Engineering,2027-01-04,2027-01-16,112,PROPOSED / NOT APPROVED,Proposed allowance; replace with verified inputs
B04-ANA,ICG-ICP LD,Bridge/platform and preservice analysis preparation,20,OFFICE,B04-BRV,,Structural,2027-01-18,2027-02-13,112,PROPOSED / NOT APPROVED,Proposed engineering effort window; native analysis/check evidence not supplied
B04-ARV,ICG-ICP LD,Analysis review and comment closure allowance,10,OFFICE,B04-ANA,,Engineering,2027-02-15,2027-02-27,112,PROPOSED / NOT APPROVED,Proposed allowance; replace with verified inputs
B04-DET,ICG-ICP LD,"Connection, bearing, landing and workpack detailing",15,OFFICE,B04-ARV,,Structural,2027-03-01,2027-03-20,112,PROPOSED / NOT APPROVED,Proposed allowance; replace with verified inputs
B04-DRV,ICG-ICP LD,Drawing review and comment closure allowance,10,OFFICE,B04-DET,,Engineering,2027-03-22,2027-04-03,112,PROPOSED / NOT APPROVED,Proposed allowance; replace with verified inputs
B04-AFC,ICG-ICP LD,AFC design/MTO independent check and release gate,0,ALL,B04-DRV,,Engineering,2027-04-03,2027-04-03,113,PROPOSED / NOT APPROVED,Gate; actual signed release not established
B04-RFQ,ICG-ICP LD,"Bridge steel RFQ, evaluation and PS preparation",7,OFFICE,B04-BRV,,Procurement,2027-01-18,2027-01-27,164,PROPOSED / NOT APPROVED,Proposed allowance; replace with verified inputs
B04-PRV,ICG-ICP LD,Bridge steel PS review allowance,10,OFFICE,B04-RFQ,,Procurement,2027-01-27,2027-02-10,166,PROPOSED / NOT APPROVED,Proposed allowance; replace with verified inputs
B04-PO,ICG-ICP LD,Bridge steel compliant PO release gate,0,ALL,B04-AFC;B04-PRV,,Procurement,2027-04-03,2027-04-03,113,PROPOSED / NOT APPROVED,No at-risk purchase assumed; amended domestic-origin evidence required
B04-MAT,ICG-ICP LD,"Mill production, inspection and steel delivery",15,ALL,B04-PO,,Procurement,2027-04-03,2027-04-18,113,PROPOSED / NOT APPROVED,"Unquoted45calendar-day placeholder; origin, mill capacity and transport unresolved"
B04-FAB,ICG-ICP LD,"Fit-up, welding and dimensional control",20,YARD,B04-MAT;D-NDT;D-TPI,Fabrication line 3,Fabrication,2027-04-19,2027-05-12,112,PROPOSED / NOT APPROVED,"Assumed4MT per productive bay-day; includes aggregate steel, not validated shop productivity"
B04-NDT,ICG-ICP LD,"NDT, repair allowance and dimensional release",6,YARD,B04-FAB,,QA,2027-05-12,2027-05-19,112,PROPOSED / NOT APPROVED,Proposed allowance; replace with verified inputs
B04-COA,ICG-ICP LD,"Surface preparation, coating and curing allowance",10,YARD,B04-NDT;D-COAT;B02-COA,Coating cell,Coating,2027-06-30,2027-07-11,70,PROPOSED / NOT APPROVED,Proposed allowance; replace with verified inputs
B04-REL,ICG-ICP LD,"Trial fit, verified weight/COG and loadout release",5,YARD,B04-COA,,QA / Marine,2027-07-12,2027-07-17,112,PROPOSED / NOT APPROVED,Proposed allowance; replace with verified inputs
B04-TRN,ICG-ICP LD,"Loadout, transport and offshore receipt",3,OFF,B04-REL;D-CARGO;B02-TRN,Cargo spread,Logistics,2027-10-22,2027-10-25,15,PROPOSED / NOT APPROVED,Proposed allowance; replace with verified inputs
B04-PRE,ICG-ICP LD,"PTW, access, SIMOPS and work-front readiness",3,OFF,B04-TRN;D-SCAF;D-PPE,,Construction,2027-10-25,2027-10-28,28,PROPOSED / NOT APPROVED,Proposed allowance; replace with verified inputs
B04-STR,ICG-ICP LD,Landing/platform pre-install strengthening,12,OFF,B04-PRE,Strength crew 3,Construction,2027-10-28,2027-11-09,28,PROPOSED / NOT APPROVED,Proposed4MT/crew-day; actual weld/access quantities not validated
B04-INS,ICG-ICP LD,New bridge installation,7,OFF,B04-STR;D-MAR;D-BEAR;D-GRAT;B02-INS,Heavy-lift spread,Marine / Construction,2027-11-27,2027-12-04,13,PROPOSED / NOT APPROVED,Aggregate planning allowance; engineered lifts and temporary stability required
B04-SRV,ICG-ICP LD,"Services transfer, test and accepted reinstatement",5,OFF,B04-INS;D-PIPE;D-ELEC;D-INST;D-TRAY;B02-SRV,Service transfer team,Commissioning,2027-12-04,2027-12-09,13,PROPOSED / NOT APPROVED,Proposed allowance; replace with verified inputs
B04-DEM,ICG-ICP LD,Engineered demolition/removal and scrap backload,2,OFF,B04-SRV;B02-DEM,Removal team,Construction,2027-12-11,2027-12-13,32,PROPOSED / NOT APPROVED,"Proposed15MT/day allowance; BHS sequence after safe new service transfer, subject to approved method"
B04-PUN,ICG-ICP LD,"Inspection, touch-up and offshore punch closure",3,OFF,B04-DEM,,QA / Commissioning,2027-12-13,2027-12-16,46,PROPOSED / NOT APPROVED,Proposed allowance; replace with verified inputs
B04-DOS,ICG-ICP LD,"As-built, QA and turnover dossier acceptance",10,OFFICE,B04-PUN,,Document Control,2027-12-16,2027-12-30,46,PROPOSED / NOT APPROVED,Proposed allowance; replace with verified inputs
B01-BAS,ICW-ICG UD,"Design basis, loads and interfaces",5,OFFICE,G05;D-DES,,Engineering,2026-12-28,2027-01-02,155,PROPOSED / NOT APPROVED,Proposed allowance; replace with verified inputs
B01-BRV,ICW-ICG UD,Basis review and comment closure allowance,10,OFFICE,B01-BAS,,Engineering,2027-01-04,2027-01-16,155,PROPOSED / NOT APPROVED,Proposed allowance; replace with verified inputs
B01-ANA,ICW-ICG UD,Bridge/platform and preservice analysis preparation,12,OFFICE,B01-BRV,,Structural,2027-01-18,2027-02-03,155,PROPOSED / NOT APPROVED,Proposed engineering effort window; native analysis/check evidence not supplied
B01-ARV,ICW-ICG UD,Analysis review and comment closure allowance,10,OFFICE,B01-ANA,,Engineering,2027-02-03,2027-02-17,155,PROPOSED / NOT APPROVED,Proposed allowance; replace with verified inputs
B01-DET,ICW-ICG UD,"Connection, bearing, landing and workpack detailing",10,OFFICE,B01-ARV,,Structural,2027-02-17,2027-03-03,155,PROPOSED / NOT APPROVED,Proposed allowance; replace with verified inputs
B01-DRV,ICW-ICG UD,Drawing review and comment closure allowance,10,OFFICE,B01-DET,,Engineering,2027-03-03,2027-03-17,155,PROPOSED / NOT APPROVED,Proposed allowance; replace with verified inputs
B01-AFC,ICW-ICG UD,AFC design/MTO independent check and release gate,0,ALL,B01-DRV,,Engineering,2027-03-17,2027-03-17,155,PROPOSED / NOT APPROVED,Gate; actual signed release not established
B01-RFQ,ICW-ICG UD,"Bridge steel RFQ, evaluation and PS preparation",7,OFFICE,B01-BRV,,Procurement,2027-01-18,2027-01-27,190,PROPOSED / NOT APPROVED,Proposed allowance; replace with verified inputs
B01-PRV,ICW-ICG UD,Bridge steel PS review allowance,10,OFFICE,B01-RFQ,,Procurement,2027-01-27,2027-02-10,190,PROPOSED / NOT APPROVED,Proposed allowance; replace with verified inputs
B01-PO,ICW-ICG UD,Bridge steel compliant PO release gate,0,ALL,B01-AFC;B01-PRV,,Procurement,2027-03-17,2027-03-17,155,PROPOSED / NOT APPROVED,No at-risk purchase assumed; amended domestic-origin evidence required
B01-MAT,ICW-ICG UD,"Mill production, inspection and steel delivery",15,ALL,B01-PO,,Procurement,2027-03-17,2027-04-01,155,PROPOSED / NOT APPROVED,"Unquoted45calendar-day placeholder; origin, mill capacity and transport unresolved"
B01-FAB,ICW-ICG UD,"Fit-up, welding and dimensional control",8,YARD,B01-MAT;D-NDT;D-TPI,Fabrication line 4,Fabrication,2027-04-01,2027-04-10,155,PROPOSED / NOT APPROVED,"Assumed4MT per productive bay-day; includes aggregate steel, not validated shop productivity"
B01-NDT,ICW-ICG UD,"NDT, repair allowance and dimensional release",6,YARD,B01-FAB,,QA,2027-04-10,2027-04-17,156,PROPOSED / NOT APPROVED,Proposed allowance; replace with verified inputs
B01-COA,ICW-ICG UD,"Surface preparation, coating and curing allowance",10,YARD,B01-NDT;D-COAT;B04-COA,Coating cell,Coating,2027-07-12,2027-07-23,70,PROPOSED / NOT APPROVED,Proposed allowance; replace with verified inputs
B01-REL,ICW-ICG UD,"Trial fit, verified weight/COG and loadout release",5,YARD,B01-COA,,QA / Marine,2027-07-23,2027-07-29,103,PROPOSED / NOT APPROVED,Proposed allowance; replace with verified inputs
B01-TRN,ICW-ICG UD,"Loadout, transport and offshore receipt",3,OFF,B01-REL;D-CARGO;B04-TRN,Cargo spread,Logistics,2027-10-25,2027-10-28,15,PROPOSED / NOT APPROVED,Proposed allowance; replace with verified inputs
B01-PRE,ICW-ICG UD,"PTW, access, SIMOPS and work-front readiness",3,OFF,B01-TRN;D-SCAF;D-PPE,,Construction,2027-10-28,2027-10-31,15,PROPOSED / NOT APPROVED,Proposed allowance; replace with verified inputs
B01-STR,ICW-ICG UD,Landing/platform pre-install strengthening,8,OFF,B01-PRE;B05-STR,Strength crew 1,Construction,2027-11-13,2027-11-21,2,PROPOSED / NOT APPROVED,Proposed4MT/crew-day; actual weld/access quantities not validated
B01-INS,ICW-ICG UD,Bridge strengthening and replacement items,5,OFF,B01-STR;D-MAR;D-BEAR;D-GRAT,Strength crew 1,Marine / Construction,2027-11-21,2027-11-26,2,PROPOSED / NOT APPROVED,Aggregate planning allowance; engineered lifts and temporary stability required
B01-SRV,ICW-ICG UD,"Services transfer, test and accepted reinstatement",5,OFF,B01-INS;D-PIPE;D-ELEC;D-INST;D-TRAY;B04-SRV,Service transfer team,Commissioning,2027-12-09,2027-12-14,13,PROPOSED / NOT APPROVED,Proposed allowance; replace with verified inputs
B01-DEM,ICW-ICG UD,Engineered demolition/removal and scrap backload,2,OFF,B01-SRV;B04-DEM,Removal team,Construction,2027-12-14,2027-12-16,31,PROPOSED / NOT APPROVED,"Proposed15MT/day allowance; BHS sequence after safe new service transfer, subject to approved method"
B01-PUN,ICW-ICG UD,"Inspection, touch-up and offshore punch closure",3,OFF,B01-DEM,,QA / Commissioning,2027-12-16,2027-12-19,43,PROPOSED / NOT APPROVED,Proposed allowance; replace with verified inputs
B01-DOS,ICW-ICG UD,"As-built, QA and turnover dossier acceptance",10,OFFICE,B01-PUN,,Document Control,2027-12-20,2028-01-01,42,PROPOSED / NOT APPROVED,Proposed allowance; replace with verified inputs
B03-BAS,ICG-ICP UD,"Design basis, loads and interfaces",5,OFFICE,G05;D-DES,,Engineering,2026-12-28,2027-01-02,157,PROPOSED / NOT APPROVED,Proposed allowance; replace with verified inputs
B03-BRV,ICG-ICP UD,Basis review and comment closure allowance,10,OFFICE,B03-BAS,,Engineering,2027-01-04,2027-01-16,157,PROPOSED / NOT APPROVED,Proposed allowance; replace with verified inputs
B03-ANA,ICG-ICP UD,Bridge/platform and preservice analysis preparation,12,OFFICE,B03-BRV,,Structural,2027-01-18,2027-02-03,157,PROPOSED / NOT APPROVED,Proposed engineering effort window; native analysis/check evidence not supplied
B03-ARV,ICG-ICP UD,Analysis review and comment closure allowance,10,OFFICE,B03-ANA,,Engineering,2027-02-03,2027-02-17,159,PROPOSED / NOT APPROVED,Proposed allowance; replace with verified inputs
B03-DET,ICG-ICP UD,"Connection, bearing, landing and workpack detailing",10,OFFICE,B03-ARV,,Structural,2027-02-17,2027-03-03,159,PROPOSED / NOT APPROVED,Proposed allowance; replace with verified inputs
B03-DRV,ICG-ICP UD,Drawing review and comment closure allowance,10,OFFICE,B03-DET,,Engineering,2027-03-03,2027-03-17,159,PROPOSED / NOT APPROVED,Proposed allowance; replace with verified inputs
B03-AFC,ICG-ICP UD,AFC design/MTO independent check and release gate,0,ALL,B03-DRV,,Engineering,2027-03-17,2027-03-17,159,PROPOSED / NOT APPROVED,Gate; actual signed release not established
B03-RFQ,ICG-ICP UD,"Bridge steel RFQ, evaluation and PS preparation",7,OFFICE,B03-BRV,,Procurement,2027-01-18,2027-01-27,192,PROPOSED / NOT APPROVED,Proposed allowance; replace with verified inputs
B03-PRV,ICG-ICP UD,Bridge steel PS review allowance,10,OFFICE,B03-RFQ,,Procurement,2027-01-27,2027-02-10,194,PROPOSED / NOT APPROVED,Proposed allowance; replace with verified inputs
B03-PO,ICG-ICP UD,Bridge steel compliant PO release gate,0,ALL,B03-AFC;B03-PRV,,Procurement,2027-03-17,2027-03-17,159,PROPOSED / NOT APPROVED,No at-risk purchase assumed; amended domestic-origin evidence required
B03-MAT,ICG-ICP UD,"Mill production, inspection and steel delivery",15,ALL,B03-PO,,Procurement,2027-03-17,2027-04-01,159,PROPOSED / NOT APPROVED,"Unquoted45calendar-day placeholder; origin, mill capacity and transport unresolved"
B03-FAB,ICG-ICP UD,"Fit-up, welding and dimensional control",15,YARD,B03-MAT;D-NDT;D-TPI;B05-FAB,Fabrication line 1,Fabrication,2027-05-31,2027-06-17,99,PROPOSED / NOT APPROVED,"Assumed4MT per productive bay-day; includes aggregate steel, not validated shop productivity"
B03-NDT,ICG-ICP UD,"NDT, repair allowance and dimensional release",6,YARD,B03-FAB,,QA,2027-06-17,2027-06-24,99,PROPOSED / NOT APPROVED,Proposed allowance; replace with verified inputs
B03-COA,ICG-ICP UD,"Surface preparation, coating and curing allowance",10,YARD,B03-NDT;D-COAT;B01-COA,Coating cell,Coating,2027-07-23,2027-08-04,70,PROPOSED / NOT APPROVED,Proposed allowance; replace with verified inputs
B03-REL,ICG-ICP UD,"Trial fit, verified weight/COG and loadout release",5,YARD,B03-COA,,QA / Marine,2027-08-04,2027-08-10,98,PROPOSED / NOT APPROVED,Proposed allowance; replace with verified inputs
B03-TRN,ICG-ICP UD,"Loadout, transport and offshore receipt",3,OFF,B03-REL;D-CARGO;B01-TRN,Cargo spread,Logistics,2027-10-28,2027-10-31,19,PROPOSED / NOT APPROVED,Proposed allowance; replace with verified inputs
B03-PRE,ICG-ICP UD,"PTW, access, SIMOPS and work-front readiness",3,OFF,B03-TRN;D-SCAF;D-PPE,,Construction,2027-10-31,2027-11-03,24,PROPOSED / NOT APPROVED,Proposed allowance; replace with verified inputs
B03-STR,ICG-ICP UD,Landing/platform pre-install strengthening,8,OFF,B03-PRE;B02-STR,Strength crew 2,Construction,2027-11-11,2027-11-19,16,PROPOSED / NOT APPROVED,Proposed4MT/crew-day; actual weld/access quantities not validated
B03-INS,ICG-ICP UD,Bridge strengthening and replacement items,22,OFF,B03-STR;D-MAR;D-BEAR;D-GRAT,Strength crew 2,Marine / Construction,2027-11-19,2027-12-11,16,PROPOSED / NOT APPROVED,Aggregate planning allowance; engineered lifts and temporary stability required
B03-SRV,ICG-ICP UD,"Services transfer, test and accepted reinstatement",5,OFF,B03-INS;D-PIPE;D-ELEC;D-INST;D-TRAY;B01-SRV,Service transfer team,Commissioning,2027-12-14,2027-12-19,13,PROPOSED / NOT APPROVED,Proposed allowance; replace with verified inputs
B03-DEM,ICG-ICP UD,Engineered demolition/removal and scrap backload,2,OFF,B03-SRV;B01-DEM,Removal team,Construction,2027-12-19,2027-12-21,28,PROPOSED / NOT APPROVED,"Proposed15MT/day allowance; BHS sequence after safe new service transfer, subject to approved method"
B03-PUN,ICG-ICP UD,"Inspection, touch-up and offshore punch closure",3,OFF,B03-DEM,,QA / Commissioning,2027-12-21,2027-12-24,38,PROPOSED / NOT APPROVED,Proposed allowance; replace with verified inputs
B03-DOS,ICG-ICP UD,"As-built, QA and turnover dossier acceptance",10,OFFICE,B03-PUN,,Document Control,2027-12-24,2028-01-07,38,PROPOSED / NOT APPROVED,Proposed allowance; replace with verified inputs
B06-BAS,SLQ-WIS,"Design basis, loads and interfaces",5,OFFICE,G05;D-DES,,Engineering,2026-12-28,2027-01-02,172,PROPOSED / NOT APPROVED,Proposed allowance; replace with verified inputs
B06-BRV,SLQ-WIS,Basis review and comment closure allowance,10,OFFICE,B06-BAS,,Engineering,2027-01-04,2027-01-16,172,PROPOSED / NOT APPROVED,Proposed allowance; replace with verified inputs
B06-ANA,SLQ-WIS,Bridge/platform and preservice analysis preparation,12,OFFICE,B06-BRV,,Structural,2027-01-18,2027-02-03,172,PROPOSED / NOT APPROVED,Proposed engineering effort window; native analysis/check evidence not supplied
B06-ARV,SLQ-WIS,Analysis review and comment closure allowance,10,OFFICE,B06-ANA,,Engineering,2027-02-03,2027-02-17,174,PROPOSED / NOT APPROVED,Proposed allowance; replace with verified inputs
B06-DET,SLQ-WIS,"Connection, bearing, landing and workpack detailing",10,OFFICE,B06-ARV,,Structural,2027-02-17,2027-03-03,174,PROPOSED / NOT APPROVED,Proposed allowance; replace with verified inputs
B06-DRV,SLQ-WIS,Drawing review and comment closure allowance,10,OFFICE,B06-DET,,Engineering,2027-03-03,2027-03-17,174,PROPOSED / NOT APPROVED,Proposed allowance; replace with verified inputs
B06-AFC,SLQ-WIS,AFC design/MTO independent check and release gate,0,ALL,B06-DRV,,Engineering,2027-03-17,2027-03-17,174,PROPOSED / NOT APPROVED,Gate; actual signed release not established
B06-RFQ,SLQ-WIS,"Bridge steel RFQ, evaluation and PS preparation",7,OFFICE,B06-BRV,,Procurement,2027-01-18,2027-01-27,207,PROPOSED / NOT APPROVED,Proposed allowance; replace with verified inputs
B06-PRV,SLQ-WIS,Bridge steel PS review allowance,10,OFFICE,B06-RFQ,,Procurement,2027-01-27,2027-02-10,209,PROPOSED / NOT APPROVED,Proposed allowance; replace with verified inputs
B06-PO,SLQ-WIS,Bridge steel compliant PO release gate,0,ALL,B06-AFC;B06-PRV,,Procurement,2027-03-17,2027-03-17,174,PROPOSED / NOT APPROVED,No at-risk purchase assumed; amended domestic-origin evidence required
B06-MAT,SLQ-WIS,"Mill production, inspection and steel delivery",15,ALL,B06-PO,,Procurement,2027-03-17,2027-04-01,174,PROPOSED / NOT APPROVED,"Unquoted45calendar-day placeholder; origin, mill capacity and transport unresolved"
B06-FAB,SLQ-WIS,"Fit-up, welding and dimensional control",12,YARD,B06-MAT;D-NDT;D-TPI;B02-FAB,Fabrication line 2,Fabrication,2027-05-07,2027-05-21,138,PROPOSED / NOT APPROVED,"Assumed4MT per productive bay-day; includes aggregate steel, not validated shop productivity"
B06-NDT,SLQ-WIS,"NDT, repair allowance and dimensional release",6,YARD,B06-FAB,,QA,2027-05-21,2027-05-28,138,PROPOSED / NOT APPROVED,Proposed allowance; replace with verified inputs
B06-COA,SLQ-WIS,"Surface preparation, coating and curing allowance",10,YARD,B06-NDT;D-COAT;B03-COA,Coating cell,Coating,2027-08-04,2027-08-15,70,PROPOSED / NOT APPROVED,Proposed allowance; replace with verified inputs
B06-REL,SLQ-WIS,"Trial fit, verified weight/COG and loadout release",5,YARD,B06-COA,,QA / Marine,2027-08-16,2027-08-21,89,PROPOSED / NOT APPROVED,Proposed allowance; replace with verified inputs
B06-TRN,SLQ-WIS,"Loadout, transport and offshore receipt",3,OFF,B06-REL;D-CARGO;B03-TRN,Cargo spread,Logistics,2027-10-31,2027-11-03,19,PROPOSED / NOT APPROVED,Proposed allowance; replace with verified inputs
B06-PRE,SLQ-WIS,"PTW, access, SIMOPS and work-front readiness",3,OFF,B06-TRN;D-SCAF;D-PPE,,Construction,2027-11-03,2027-11-06,31,PROPOSED / NOT APPROVED,Proposed allowance; replace with verified inputs
B06-STR,SLQ-WIS,Landing/platform pre-install strengthening,8,OFF,B06-PRE;B04-STR,Strength crew 3,Construction,2027-11-09,2027-11-17,28,PROPOSED / NOT APPROVED,Proposed4MT/crew-day; actual weld/access quantities not validated
B06-INS,SLQ-WIS,Bridge strengthening and replacement items,16,OFF,B06-STR;D-MAR;D-BEAR;D-GRAT,Strength crew 3,Marine / Construction,2027-11-17,2027-12-03,28,PROPOSED / NOT APPROVED,Aggregate planning allowance; engineered lifts and temporary stability required
B06-SRV,SLQ-WIS,"Services transfer, test and accepted reinstatement",5,OFF,B06-INS;D-PIPE;D-ELEC;D-INST;D-TRAY;B03-SRV,Service transfer team,Commissioning,2027-12-19,2027-12-24,13,PROPOSED / NOT APPROVED,Proposed allowance; replace with verified inputs
B06-DEM,SLQ-WIS,Engineered demolition/removal and scrap backload,2,OFF,B06-SRV;B03-DEM,Removal team,Construction,2027-12-24,2027-12-26,25,PROPOSED / NOT APPROVED,"Proposed15MT/day allowance; BHS sequence after safe new service transfer, subject to approved method"
B06-PUN,SLQ-WIS,"Inspection, touch-up and offshore punch closure",3,OFF,B06-DEM,,QA / Commissioning,2027-12-26,2027-12-29,33,PROPOSED / NOT APPROVED,Proposed allowance; replace with verified inputs
B06-DOS,SLQ-WIS,"As-built, QA and turnover dossier acceptance",10,OFFICE,B06-PUN,,Document Control,2027-12-29,2028-01-12,33,PROPOSED / NOT APPROVED,Proposed allowance; replace with verified inputs
B07-BAS,NQO-NQD,"Design basis, loads and interfaces",5,OFFICE,G05;D-DES,,Engineering,2026-12-28,2027-01-02,185,PROPOSED / NOT APPROVED,Proposed allowance; replace with verified inputs
B07-BRV,NQO-NQD,Basis review and comment closure allowance,10,OFFICE,B07-BAS,,Engineering,2027-01-04,2027-01-16,185,PROPOSED / NOT APPROVED,Proposed allowance; replace with verified inputs
B07-ANA,NQO-NQD,Bridge/platform and preservice analysis preparation,12,OFFICE,B07-BRV,,Structural,2027-01-18,2027-02-03,185,PROPOSED / NOT APPROVED,Proposed engineering effort window; native analysis/check evidence not supplied
B07-ARV,NQO-NQD,Analysis review and comment closure allowance,10,OFFICE,B07-ANA,,Engineering,2027-02-03,2027-02-17,187,PROPOSED / NOT APPROVED,Proposed allowance; replace with verified inputs
B07-DET,NQO-NQD,"Connection, bearing, landing and workpack detailing",10,OFFICE,B07-ARV,,Structural,2027-02-17,2027-03-03,187,PROPOSED / NOT APPROVED,Proposed allowance; replace with verified inputs
B07-DRV,NQO-NQD,Drawing review and comment closure allowance,10,OFFICE,B07-DET,,Engineering,2027-03-03,2027-03-17,187,PROPOSED / NOT APPROVED,Proposed allowance; replace with verified inputs
B07-AFC,NQO-NQD,AFC design/MTO independent check and release gate,0,ALL,B07-DRV,,Engineering,2027-03-17,2027-03-17,186,PROPOSED / NOT APPROVED,Gate; actual signed release not established
B07-RFQ,NQO-NQD,"Bridge steel RFQ, evaluation and PS preparation",7,OFFICE,B07-BRV,,Procurement,2027-01-18,2027-01-27,220,PROPOSED / NOT APPROVED,Proposed allowance; replace with verified inputs
B07-PRV,NQO-NQD,Bridge steel PS review allowance,10,OFFICE,B07-RFQ,,Procurement,2027-01-27,2027-02-10,222,PROPOSED / NOT APPROVED,Proposed allowance; replace with verified inputs
B07-PO,NQO-NQD,Bridge steel compliant PO release gate,0,ALL,B07-AFC;B07-PRV,,Procurement,2027-03-17,2027-03-17,186,PROPOSED / NOT APPROVED,No at-risk purchase assumed; amended domestic-origin evidence required
B07-MAT,NQO-NQD,"Mill production, inspection and steel delivery",15,ALL,B07-PO,,Procurement,2027-03-17,2027-04-01,186,PROPOSED / NOT APPROVED,"Unquoted45calendar-day placeholder; origin, mill capacity and transport unresolved"
B07-FAB,NQO-NQD,"Fit-up, welding and dimensional control",12,YARD,B07-MAT;D-NDT;D-TPI;B04-FAB,Fabrication line 3,Fabrication,2027-05-12,2027-05-26,145,PROPOSED / NOT APPROVED,"Assumed4MT per productive bay-day; includes aggregate steel, not validated shop productivity"
B07-NDT,NQO-NQD,"NDT, repair allowance and dimensional release",6,YARD,B07-FAB,,QA,2027-05-26,2027-06-02,145,PROPOSED / NOT APPROVED,Proposed allowance; replace with verified inputs
B07-COA,NQO-NQD,"Surface preparation, coating and curing allowance",10,YARD,B07-NDT;D-COAT;B06-COA,Coating cell,Coating,2027-08-16,2027-08-27,70,PROPOSED / NOT APPROVED,Proposed allowance; replace with verified inputs
B07-REL,NQO-NQD,"Trial fit, verified weight/COG and loadout release",5,YARD,B07-COA,,QA / Marine,2027-08-27,2027-09-02,81,PROPOSED / NOT APPROVED,Proposed allowance; replace with verified inputs
B07-TRN,NQO-NQD,"Loadout, transport and offshore receipt",3,OFF,B07-REL;D-CARGO;B06-TRN,Cargo spread,Logistics,2027-11-03,2027-11-06,19,PROPOSED / NOT APPROVED,Proposed allowance; replace with verified inputs
B07-PRE,NQO-NQD,"PTW, access, SIMOPS and work-front readiness",3,OFF,B07-TRN;D-SCAF;D-PPE,,Construction,2027-11-06,2027-11-09,19,PROPOSED / NOT APPROVED,Proposed allowance; replace with verified inputs
B07-STR,NQO-NQD,Landing/platform pre-install strengthening,8,OFF,B07-PRE;B01-INS,Strength crew 1,Construction,2027-11-26,2027-12-04,2,PROPOSED / NOT APPROVED,Proposed4MT/crew-day; actual weld/access quantities not validated
B07-INS,NQO-NQD,Bridge strengthening and replacement items,16,OFF,B07-STR;D-MAR;D-BEAR;D-GRAT,Strength crew 1,Marine / Construction,2027-12-04,2027-12-20,2,PROPOSED / NOT APPROVED,Aggregate planning allowance; engineered lifts and temporary stability required
B07-SRV,NQO-NQD,"Services transfer, test and accepted reinstatement",5,OFF,B07-INS;D-PIPE;D-ELEC;D-INST;D-TRAY;B06-SRV,Service transfer team,Commissioning,2027-12-24,2027-12-29,13,PROPOSED / NOT APPROVED,Proposed allowance; replace with verified inputs
B07-DEM,NQO-NQD,Engineered demolition/removal and scrap backload,2,OFF,B07-SRV;B06-DEM,Removal team,Construction,2027-12-29,2027-12-31,22,PROPOSED / NOT APPROVED,"Proposed15MT/day allowance; BHS sequence after safe new service transfer, subject to approved method"
B07-PUN,NQO-NQD,"Inspection, touch-up and offshore punch closure",3,OFF,B07-DEM,,QA / Commissioning,2027-12-31,2028-01-03,28,PROPOSED / NOT APPROVED,Proposed allowance; replace with verified inputs
B07-DOS,NQO-NQD,"As-built, QA and turnover dossier acceptance",10,OFFICE,B07-PUN,,Document Control,2028-01-03,2028-01-15,28,PROPOSED / NOT APPROVED,Proposed allowance; replace with verified inputs
B08-BAS,WIN-NC,"Design basis, loads and interfaces",5,OFFICE,G05;D-DES,,Engineering,2026-12-28,2027-01-02,200,PROPOSED / NOT APPROVED,Proposed allowance; replace with verified inputs
B08-BRV,WIN-NC,Basis review and comment closure allowance,10,OFFICE,B08-BAS,,Engineering,2027-01-04,2027-01-16,200,PROPOSED / NOT APPROVED,Proposed allowance; replace with verified inputs
B08-ANA,WIN-NC,Bridge/platform and preservice analysis preparation,12,OFFICE,B08-BRV,,Structural,2027-01-18,2027-02-03,200,PROPOSED / NOT APPROVED,Proposed engineering effort window; native analysis/check evidence not supplied
B08-ARV,WIN-NC,Analysis review and comment closure allowance,10,OFFICE,B08-ANA,,Engineering,2027-02-03,2027-02-17,202,PROPOSED / NOT APPROVED,Proposed allowance; replace with verified inputs
B08-DET,WIN-NC,"Connection, bearing, landing and workpack detailing",10,OFFICE,B08-ARV,,Structural,2027-02-17,2027-03-03,202,PROPOSED / NOT APPROVED,Proposed allowance; replace with verified inputs
B08-DRV,WIN-NC,Drawing review and comment closure allowance,10,OFFICE,B08-DET,,Engineering,2027-03-03,2027-03-17,202,PROPOSED / NOT APPROVED,Proposed allowance; replace with verified inputs
B08-AFC,WIN-NC,AFC design/MTO independent check and release gate,0,ALL,B08-DRV,,Engineering,2027-03-17,2027-03-17,202,PROPOSED / NOT APPROVED,Gate; actual signed release not established
B08-RFQ,WIN-NC,"Bridge steel RFQ, evaluation and PS preparation",7,OFFICE,B08-BRV,,Procurement,2027-01-18,2027-01-27,235,PROPOSED / NOT APPROVED,Proposed allowance; replace with verified inputs
B08-PRV,WIN-NC,Bridge steel PS review allowance,10,OFFICE,B08-RFQ,,Procurement,2027-01-27,2027-02-10,237,PROPOSED / NOT APPROVED,Proposed allowance; replace with verified inputs
B08-PO,WIN-NC,Bridge steel compliant PO release gate,0,ALL,B08-AFC;B08-PRV,,Procurement,2027-03-17,2027-03-17,202,PROPOSED / NOT APPROVED,No at-risk purchase assumed; amended domestic-origin evidence required
B08-MAT,WIN-NC,"Mill production, inspection and steel delivery",15,ALL,B08-PO,,Procurement,2027-03-17,2027-04-01,202,PROPOSED / NOT APPROVED,"Unquoted45calendar-day placeholder; origin, mill capacity and transport unresolved"
B08-FAB,WIN-NC,"Fit-up, welding and dimensional control",8,YARD,B08-MAT;D-NDT;D-TPI;B01-FAB,Fabrication line 4,Fabrication,2027-04-10,2027-04-20,193,PROPOSED / NOT APPROVED,"Assumed4MT per productive bay-day; includes aggregate steel, not validated shop productivity"
B08-NDT,WIN-NC,"NDT, repair allowance and dimensional release",6,YARD,B08-FAB,,QA,2027-04-20,2027-04-27,192,PROPOSED / NOT APPROVED,Proposed allowance; replace with verified inputs
B08-COA,WIN-NC,"Surface preparation, coating and curing allowance",10,YARD,B08-NDT;D-COAT;B07-COA,Coating cell,Coating,2027-08-27,2027-09-08,70,PROPOSED / NOT APPROVED,Proposed allowance; replace with verified inputs
B08-REL,WIN-NC,"Trial fit, verified weight/COG and loadout release",5,YARD,B08-COA,,QA / Marine,2027-09-08,2027-09-14,87,PROPOSED / NOT APPROVED,Proposed allowance; replace with verified inputs
B08-TRN,WIN-NC,"Loadout, transport and offshore receipt",3,OFF,B08-REL;D-CARGO;B07-TRN,Cargo spread,Logistics,2027-11-06,2027-11-09,34,PROPOSED / NOT APPROVED,Proposed allowance; replace with verified inputs
B08-PRE,WIN-NC,"PTW, access, SIMOPS and work-front readiness",3,OFF,B08-TRN;D-SCAF;D-PPE,,Construction,2027-11-09,2027-11-12,45,PROPOSED / NOT APPROVED,Proposed allowance; replace with verified inputs
B08-STR,WIN-NC,Landing/platform pre-install strengthening,10,OFF,B08-PRE;B03-INS,Strength crew 2,Construction,2027-12-11,2027-12-21,16,PROPOSED / NOT APPROVED,Proposed4MT/crew-day; actual weld/access quantities not validated
B08-INS,WIN-NC,Bridge strengthening and replacement items,5,OFF,B08-STR;D-MAR;D-BEAR;D-GRAT,Strength crew 2,Marine / Construction,2027-12-21,2027-12-26,16,PROPOSED / NOT APPROVED,Aggregate planning allowance; engineered lifts and temporary stability required
B08-SRV,WIN-NC,"Services transfer, test and accepted reinstatement",5,OFF,B08-INS;D-PIPE;D-ELEC;D-INST;D-TRAY;B07-SRV,Service transfer team,Commissioning,2027-12-29,2028-01-03,13,PROPOSED / NOT APPROVED,Proposed allowance; replace with verified inputs
B08-DEM,WIN-NC,Engineered demolition/removal and scrap backload,2,OFF,B08-SRV;B07-DEM,Removal team,Construction,2028-01-03,2028-01-05,19,PROPOSED / NOT APPROVED,"Proposed15MT/day allowance; BHS sequence after safe new service transfer, subject to approved method"
B08-PUN,WIN-NC,"Inspection, touch-up and offshore punch closure",3,OFF,B08-DEM,,QA / Commissioning,2028-01-05,2028-01-08,23,PROPOSED / NOT APPROVED,Proposed allowance; replace with verified inputs
B08-DOS,WIN-NC,"As-built, QA and turnover dossier acceptance",10,OFFICE,B08-PUN,,Document Control,2028-01-10,2028-01-22,21,PROPOSED / NOT APPROVED,Proposed allowance; replace with verified inputs
B09-BAS,SCA-SC1,"Design basis, loads and interfaces",5,OFFICE,G05;D-DES,,Engineering,2026-12-28,2027-01-02,213,PROPOSED / NOT APPROVED,Proposed allowance; replace with verified inputs
B09-BRV,SCA-SC1,Basis review and comment closure allowance,10,OFFICE,B09-BAS,,Engineering,2027-01-04,2027-01-16,213,PROPOSED / NOT APPROVED,Proposed allowance; replace with verified inputs
B09-ANA,SCA-SC1,Bridge/platform and preservice analysis preparation,12,OFFICE,B09-BRV,,Structural,2027-01-18,2027-02-03,213,PROPOSED / NOT APPROVED,Proposed engineering effort window; native analysis/check evidence not supplied
B09-ARV,SCA-SC1,Analysis review and comment closure allowance,10,OFFICE,B09-ANA,,Engineering,2027-02-03,2027-02-17,215,PROPOSED / NOT APPROVED,Proposed allowance; replace with verified inputs
B09-DET,SCA-SC1,"Connection, bearing, landing and workpack detailing",10,OFFICE,B09-ARV,,Structural,2027-02-17,2027-03-03,215,PROPOSED / NOT APPROVED,Proposed allowance; replace with verified inputs
B09-DRV,SCA-SC1,Drawing review and comment closure allowance,10,OFFICE,B09-DET,,Engineering,2027-03-03,2027-03-17,215,PROPOSED / NOT APPROVED,Proposed allowance; replace with verified inputs
B09-AFC,SCA-SC1,AFC design/MTO independent check and release gate,0,ALL,B09-DRV,,Engineering,2027-03-17,2027-03-17,214,PROPOSED / NOT APPROVED,Gate; actual signed release not established
B09-RFQ,SCA-SC1,"Bridge steel RFQ, evaluation and PS preparation",7,OFFICE,B09-BRV,,Procurement,2027-01-18,2027-01-27,248,PROPOSED / NOT APPROVED,Proposed allowance; replace with verified inputs
B09-PRV,SCA-SC1,Bridge steel PS review allowance,10,OFFICE,B09-RFQ,,Procurement,2027-01-27,2027-02-10,250,PROPOSED / NOT APPROVED,Proposed allowance; replace with verified inputs
B09-PO,SCA-SC1,Bridge steel compliant PO release gate,0,ALL,B09-AFC;B09-PRV,,Procurement,2027-03-17,2027-03-17,214,PROPOSED / NOT APPROVED,No at-risk purchase assumed; amended domestic-origin evidence required
B09-MAT,SCA-SC1,"Mill production, inspection and steel delivery",15,ALL,B09-PO,,Procurement,2027-03-17,2027-04-01,214,PROPOSED / NOT APPROVED,"Unquoted45calendar-day placeholder; origin, mill capacity and transport unresolved"
B09-FAB,SCA-SC1,"Fit-up, welding and dimensional control",8,YARD,B09-MAT;D-NDT;D-TPI;B03-FAB,Fabrication line 1,Fabrication,2027-06-17,2027-06-26,137,PROPOSED / NOT APPROVED,"Assumed4MT per productive bay-day; includes aggregate steel, not validated shop productivity"
B09-NDT,SCA-SC1,"NDT, repair allowance and dimensional release",6,YARD,B09-FAB,,QA,2027-06-26,2027-07-03,137,PROPOSED / NOT APPROVED,Proposed allowance; replace with verified inputs
B09-COA,SCA-SC1,"Surface preparation, coating and curing allowance",10,YARD,B09-NDT;D-COAT;B08-COA,Coating cell,Coating,2027-09-08,2027-09-19,70,PROPOSED / NOT APPROVED,Proposed allowance; replace with verified inputs
B09-REL,SCA-SC1,"Trial fit, verified weight/COG and loadout release",5,YARD,B09-COA,,QA / Marine,2027-09-20,2027-09-25,78,PROPOSED / NOT APPROVED,Proposed allowance; replace with verified inputs
B09-TRN,SCA-SC1,"Loadout, transport and offshore receipt",3,OFF,B09-REL;D-CARGO;B08-TRN,Cargo spread,Logistics,2027-11-09,2027-11-12,34,PROPOSED / NOT APPROVED,Proposed allowance; replace with verified inputs
B09-PRE,SCA-SC1,"PTW, access, SIMOPS and work-front readiness",3,OFF,B09-TRN;D-SCAF;D-PPE,,Construction,2027-11-12,2027-11-15,46,PROPOSED / NOT APPROVED,Proposed allowance; replace with verified inputs
B09-STR,SCA-SC1,Landing/platform pre-install strengthening,7,OFF,B09-PRE;B06-INS,Strength crew 3,Construction,2027-12-03,2027-12-10,28,PROPOSED / NOT APPROVED,Proposed4MT/crew-day; actual weld/access quantities not validated
B09-INS,SCA-SC1,Bridge strengthening and replacement items,9,OFF,B09-STR;D-MAR;D-BEAR;D-GRAT,Strength crew 3,Marine / Construction,2027-12-10,2027-12-19,28,PROPOSED / NOT APPROVED,Aggregate planning allowance; engineered lifts and temporary stability required
B09-SRV,SCA-SC1,"Services transfer, test and accepted reinstatement",5,OFF,B09-INS;D-PIPE;D-ELEC;D-INST;D-TRAY;B08-SRV,Service transfer team,Commissioning,2028-01-03,2028-01-08,13,PROPOSED / NOT APPROVED,Proposed allowance; replace with verified inputs
B09-DEM,SCA-SC1,Engineered demolition/removal and scrap backload,2,OFF,B09-SRV;B08-DEM,Removal team,Construction,2028-01-08,2028-01-10,16,PROPOSED / NOT APPROVED,"Proposed15MT/day allowance; BHS sequence after safe new service transfer, subject to approved method"
B09-PUN,SCA-SC1,"Inspection, touch-up and offshore punch closure",3,OFF,B09-DEM,,QA / Commissioning,2028-01-10,2028-01-13,18,PROPOSED / NOT APPROVED,Proposed allowance; replace with verified inputs
B09-DOS,SCA-SC1,"As-built, QA and turnover dossier acceptance",10,OFFICE,B09-PUN,,Document Control,2028-01-13,2028-01-27,18,PROPOSED / NOT APPROVED,Proposed allowance; replace with verified inputs
B10-BAS,SCA-SCF,"Design basis, loads and interfaces",5,OFFICE,G05;D-DES,,Engineering,2026-12-28,2027-01-02,217,PROPOSED / NOT APPROVED,Proposed allowance; replace with verified inputs
B10-BRV,SCA-SCF,Basis review and comment closure allowance,10,OFFICE,B10-BAS,,Engineering,2027-01-04,2027-01-16,217,PROPOSED / NOT APPROVED,Proposed allowance; replace with verified inputs
B10-ANA,SCA-SCF,Bridge/platform and preservice analysis preparation,12,OFFICE,B10-BRV,,Structural,2027-01-18,2027-02-03,217,PROPOSED / NOT APPROVED,Proposed engineering effort window; native analysis/check evidence not supplied
B10-ARV,SCA-SCF,Analysis review and comment closure allowance,10,OFFICE,B10-ANA,,Engineering,2027-02-03,2027-02-17,217,PROPOSED / NOT APPROVED,Proposed allowance; replace with verified inputs
B10-DET,SCA-SCF,"Connection, bearing, landing and workpack detailing",10,OFFICE,B10-ARV,,Structural,2027-02-17,2027-03-03,217,PROPOSED / NOT APPROVED,Proposed allowance; replace with verified inputs
B10-DRV,SCA-SCF,Drawing review and comment closure allowance,10,OFFICE,B10-DET,,Engineering,2027-03-03,2027-03-17,217,PROPOSED / NOT APPROVED,Proposed allowance; replace with verified inputs
B10-AFC,SCA-SCF,AFC design/MTO independent check and release gate,0,ALL,B10-DRV,,Engineering,2027-03-17,2027-03-17,217,PROPOSED / NOT APPROVED,Gate; actual signed release not established
B10-RFQ,SCA-SCF,"Bridge steel RFQ, evaluation and PS preparation",7,OFFICE,B10-BRV,,Procurement,2027-01-18,2027-01-27,252,PROPOSED / NOT APPROVED,Proposed allowance; replace with verified inputs
B10-PRV,SCA-SCF,Bridge steel PS review allowance,10,OFFICE,B10-RFQ,,Procurement,2027-01-27,2027-02-10,252,PROPOSED / NOT APPROVED,Proposed allowance; replace with verified inputs
B10-PO,SCA-SCF,Bridge steel compliant PO release gate,0,ALL,B10-AFC;B10-PRV,,Procurement,2027-03-17,2027-03-17,217,PROPOSED / NOT APPROVED,No at-risk purchase assumed; amended domestic-origin evidence required
B10-MAT,SCA-SCF,"Mill production, inspection and steel delivery",15,ALL,B10-PO,,Procurement,2027-03-17,2027-04-01,217,PROPOSED / NOT APPROVED,"Unquoted45calendar-day placeholder; origin, mill capacity and transport unresolved"
B10-FAB,SCA-SCF,"Fit-up, welding and dimensional control",15,YARD,B10-MAT;D-NDT;D-TPI;B06-FAB,Fabrication line 2,Fabrication,2027-05-21,2027-06-08,167,PROPOSED / NOT APPROVED,"Assumed4MT per productive bay-day; includes aggregate steel, not validated shop productivity"
B10-NDT,SCA-SCF,"NDT, repair allowance and dimensional release",6,YARD,B10-FAB,,QA,2027-06-08,2027-06-15,167,PROPOSED / NOT APPROVED,Proposed allowance; replace with verified inputs
B10-COA,SCA-SCF,"Surface preparation, coating and curing allowance",10,YARD,B10-NDT;D-COAT;B09-COA,Coating cell,Coating,2027-09-20,2027-10-01,70,PROPOSED / NOT APPROVED,Proposed allowance; replace with verified inputs
B10-REL,SCA-SCF,"Trial fit, verified weight/COG and loadout release",5,YARD,B10-COA,,QA / Marine,2027-10-01,2027-10-07,70,PROPOSED / NOT APPROVED,Proposed allowance; replace with verified inputs
B10-TRN,SCA-SCF,"Loadout, transport and offshore receipt",3,OFF,B10-REL;D-CARGO;B09-TRN,Cargo spread,Logistics,2027-11-12,2027-11-15,34,PROPOSED / NOT APPROVED,Proposed allowance; replace with verified inputs
B10-PRE,SCA-SCF,"PTW, access, SIMOPS and work-front readiness",3,OFF,B10-TRN;D-SCAF;D-PPE,,Construction,2027-11-15,2027-11-18,34,PROPOSED / NOT APPROVED,Proposed allowance; replace with verified inputs
B10-STR,SCA-SCF,Landing/platform pre-install strengthening,7,OFF,B10-PRE;B07-INS,Strength crew 1,Construction,2027-12-20,2027-12-27,2,PROPOSED / NOT APPROVED,Proposed4MT/crew-day; actual weld/access quantities not validated
B10-INS,SCA-SCF,Bridge strengthening and replacement items,23,OFF,B10-STR;D-MAR;D-BEAR;D-GRAT,Strength crew 1,Marine / Construction,2027-12-27,2028-01-19,2,PROPOSED / NOT APPROVED,Aggregate planning allowance; engineered lifts and temporary stability required
B10-SRV,SCA-SCF,"Services transfer, test and accepted reinstatement",5,OFF,B10-INS;D-PIPE;D-ELEC;D-INST;D-TRAY;B09-SRV,Service transfer team,Commissioning,2028-01-19,2028-01-24,2,PROPOSED / NOT APPROVED,Proposed allowance; replace with verified inputs
B10-DEM,SCA-SCF,Engineered demolition/removal and scrap backload,2,OFF,B10-SRV;B09-DEM,Removal team,Construction,2028-01-24,2028-01-26,2,PROPOSED / NOT APPROVED,"Proposed15MT/day allowance; BHS sequence after safe new service transfer, subject to approved method"
B10-PUN,SCA-SCF,"Inspection, touch-up and offshore punch closure",3,OFF,B10-DEM,,QA / Commissioning,2028-01-26,2028-01-29,2,PROPOSED / NOT APPROVED,Proposed allowance; replace with verified inputs
B10-DOS,SCA-SCF,"As-built, QA and turnover dossier acceptance",10,OFFICE,B10-PUN,,Document Control,2028-01-31,2028-02-12,0,PROPOSED / NOT APPROVED,Proposed allowance; replace with verified inputs
OFFDONE,COMMON,All bridge offshore work completed,0,ALL,B05-PUN;B02-PUN;B04-PUN;B01-PUN;B03-PUN;B06-PUN;B07-PUN;B08-PUN;B09-PUN;B10-PUN,,Project Manager,2028-01-29,2028-01-29,11,PROPOSED / NOT APPROVED,Proposed allowance; replace with verified inputs
DEMOB,COMMON,Spread demobilisation allowance,5,OFF,OFFDONE;B10-TRN,Cargo spread,Marine,2028-01-29,2028-02-03,11,PROPOSED / NOT APPROVED,Proposed allowance; replace with verified inputs
CLOSE,COMMON,"Integrated acceptance, final measurements and account preparation",10,OFFICE,B05-DOS;B02-DOS;B04-DOS;B01-DOS;B03-DOS;B06-DOS;B07-DOS;B08-DOS;B09-DOS;B10-DOS;DEMOB,,Project Manager,2028-02-14,2028-02-26,0,PROPOSED / NOT APPROVED,Proposed allowance; replace with verified inputs
FINISH,COMMON,Proposed contract-completion milestone,0,ALL,CLOSE,,Project Director,2028-02-26,2028-02-26,0,PROPOSED / NOT APPROVED,Proposed allowance; replace with verified inputs
